# Upper Tamor Hydropower Project (285 MW)

How a schedule from Primavera P6 changed from version to version. A marks actual dates.

## Version 1 (data date 2025-01-01, saved 2025-06-22)

Note of the change: Code revised and backup database

| ID | WBS | Task | Duration | Start | Finish | Predecessors | Total float | Constraint |
| --- | --- | --- | --- | --- | --- | --- | --- | --- |
|  | I | **General/Contractual** |  | 2025-01-01 | 2025-01-14 |  |  |  |
| GN-1010 |  | Letter of Acceptance | 1d | 2025-01-01 | 2025-01-01 |  | 1278d |  |
| GN-1020 |  | Submission of Performance Bank Gurantee | 14d | 2025-01-01 | 2025-01-14 |  | 1265d |  |
| GN-1030 |  | Signing of Contract Agreement | 7d | 2025-01-01 | 2025-01-07 |  | 1272d |  |
| GN-1040 |  | Access/Possession of site | 1d | 2025-01-01 | 2025-01-01 |  | 1278d |  |
| GN-1050 |  | Interim Arrangement of the Design consultant | 14d | 2025-01-01 | 2025-01-14 |  | 1265d |  |
| GN-1060 |  | Release of Moblization Advance 1st Part | 10d | 2025-01-01 | 2025-01-10 |  | 1269d |  |
| GN-1070 |  | Release of Moblization Advance 2nd Part | 10d | 2025-01-01 | 2025-01-10 |  | 1269d |  |
| GN-1100 |  | Notice to Commence | 1d | 2025-01-01 | 2025-01-01 | GN-1030 SS | 1278d |  |
|  | II | **Mobilization** |  | 2025-01-01 | 2028-09-15 |  |  |  |
|  | 1 | **Human Resources** |  | 2025-01-01 | 2028-09-15 |  |  |  |
|  | 1 | **Project Management Office** |  | 2025-01-01 | 2028-09-15 |  |  |  |
| MB-1002 |  | Project Coordinator | 1350d | 2025-01-01 | 2028-09-11 |  | -71d |  |
| MB-1000 |  | Project Manager | 1200d | 2025-06-01 | 2028-09-12 |  | -72d | start on or after 2025-06-01 |
| MB-1003 |  | Assistant PD Project Controler - 1 | 1200d | 2025-06-01 | 2028-09-12 | MB-1000 SS | -72d |  |
| MB-1001 |  | Deputy Project Manager | 1170d | 2025-07-01 | 2028-09-12 |  | -72d | start on or after 2025-07-01 |
|  | 1 | **TBM Department** |  | 2025-11-01 | 2028-09-15 |  |  |  |
| MB-1100 |  | TBM Tunnel Engineer | 1050d | 2025-11-01 | 2028-09-15 |  | -75d | start on or after 2025-11-01 |
| MB-1101 |  | QA/QC Engineer Casting Yard | 1050d | 2025-11-01 | 2028-09-15 | MB-1100 SS | -75d |  |
|  | 2 | **Civil Construction Department** |  | 2025-01-01 | 2028-09-12 |  |  |  |
| MB-1201 |  | Deputy Construction Manager-1 Powerhouse | 1350d | 2025-01-01 | 2028-09-11 |  | -71d |  |
| MB-1206 |  | Underground Engineer | 1350d | 2025-01-01 | 2028-09-11 | MB-1201 SS | -71d |  |
| MB-1207 |  | Drill & Blast Engineer - 1 | 1350d | 2025-01-01 | 2028-09-11 | MB-1206 SS | -71d |  |
| MB-1208 |  | Drill & Blast Engineer - 2 | 1350d | 2025-01-01 | 2028-09-11 | MB-1207 SS | -71d |  |
| MB-1209 |  | Tunnel Engineer - 1 | 1350d | 2025-01-01 | 2028-09-11 | MB-1208 SS | -71d |  |
| MB-1202 |  | Deputy Construction Manager-2 Dam | 1200d | 2025-06-01 | 2028-09-12 | MB-1000 SS | -72d |  |
| MB-1200 |  | Construction Manager | 1170d | 2025-07-01 | 2028-09-12 | MB-1001 SS | -72d |  |
| MB-1203 |  | Deputy Construction Manager-3 Surge Shaft & Other Component | 1170d | 2025-07-01 | 2028-09-12 | MB-1200 SS | -72d |  |
| MB-1204 |  | RCC Dam Engineer - 1 | 1170d | 2025-07-01 | 2028-09-12 | MB-1203 SS | -72d |  |
| MB-1205 |  | RCC Dam Engineer - 2 | 1170d | 2025-07-01 | 2028-09-12 | MB-1204 SS | -72d |  |
| MB-1210 |  | Tunnel Engineer - 2 | 1170d | 2025-07-01 | 2028-09-12 | MB-1205 SS | -72d |  |
| MB-1211 |  | Rebar Fabrication Yard Supervisor | 1170d | 2025-07-01 | 2028-09-12 | MB-1210 SS | -72d |  |
| MB-1212 |  | Foreman Rebar - 2 | 1170d | 2025-07-01 | 2028-09-12 | MB-1211 SS | -72d |  |
| MB-1213 |  | Foreman Formwork - 1 | 1170d | 2025-07-01 | 2028-09-12 | MB-1212 SS | -72d |  |
| MB-1214 |  | Foreman Formwork - 2 | 1170d | 2025-07-01 | 2028-09-12 | MB-1213 SS | -72d |  |
| MB-1215 |  | Foreman Concrete - 1 | 1170d | 2025-07-01 | 2028-09-12 | MB-1214 SS | -72d |  |
| MB-1216 |  | Foreman Concrete - 2 | 1170d | 2025-07-01 | 2028-09-12 | MB-1215 SS | -72d |  |
| MB-1217 |  | Excavation Foreman - 1 | 1170d | 2025-07-01 | 2028-09-12 | MB-1216 SS | -72d |  |
| MB-1218 |  | Excavation Foreman - 2 | 1170d | 2025-07-01 | 2028-09-12 | MB-1217 SS | -72d |  |
| MB-1219 |  | Rock Support Foreman - 1 | 1170d | 2025-07-01 | 2028-09-12 | MB-1218 SS | -72d |  |
| MB-1220 |  | Rock Support Foreman - 2 | 1170d | 2025-07-01 | 2028-09-12 | MB-1219 SS | -72d |  |
| MB-1221 |  | Drill & Blast Engineer - 3 | 1170d | 2025-07-01 | 2028-09-12 | MB-1220 SS | -72d |  |
| MB-1222 |  | Drill & Blast Engineer - 4 | 1170d | 2025-07-01 | 2028-09-12 | MB-1221 SS | -72d |  |
|  | 3 | **Plant Department** |  | 2025-01-01 | 2028-09-12 |  |  |  |
| MB-1301 |  | Mechanical Engineer | 1350d | 2025-01-01 | 2028-09-11 | MB-1002 SS | -71d |  |
| MB-1304 |  | Sr. Mechanic - 2 | 1350d | 2025-01-01 | 2028-09-11 | MB-1301 SS | -71d |  |
| MB-1300 |  | Plant Manager | 1200d | 2025-06-01 | 2028-09-12 | MB-1000 SS | -72d |  |
| MB-1302 |  | Electrical Engineer | 1170d | 2025-07-01 | 2028-09-12 | MB-1001 SS | -72d |  |
| MB-1303 |  | Sr. Mechanic - 1 | 1170d | 2025-07-01 | 2028-09-12 | MB-1302 SS | -72d |  |
| MB-1305 |  | Electrical Foreman - 2 | 1170d | 2025-07-01 | 2028-09-12 | MB-1303 SS | -72d |  |
| MB-1306 |  | Electrical Foreman - 2 | 1170d | 2025-07-01 | 2028-09-12 | MB-1305 SS | -72d |  |
|  | 4 | **HSE Department** |  | 2025-01-01 | 2028-09-12 |  |  |  |
| MB-1402 |  | Safety Officer - 1 | 1350d | 2025-01-01 | 2028-09-11 |  | -71d |  |
| MB-1400 |  | HSE Manager | 1170d | 2025-07-01 | 2028-09-12 | MB-1001 SS | -72d |  |
| MB-1401 |  | Environmental Engineer | 1170d | 2025-07-01 | 2028-09-12 | MB-1400 SS | -72d |  |
| MB-1403 |  | Safety Officer - 2 | 1170d | 2025-07-01 | 2028-09-12 | MB-1401 SS | -72d |  |
|  | 5 | **Quality Assurance/Quality Control Department** |  | 2025-07-01 | 2028-09-12 |  |  |  |
| MB-1500 |  | QA/QC Manager | 1170d | 2025-07-01 | 2028-09-12 | MB-1001 SS | -72d |  |
| MB-1501 |  | QA/QC Engineer | 1170d | 2025-07-01 | 2028-09-12 | MB-1500 SS | -72d |  |
| MB-1502 |  | Material Engineer | 1170d | 2025-07-01 | 2028-09-12 | MB-1501 SS | -72d |  |
| MB-1503 |  | Lab-Technician - 1 | 1170d | 2025-07-01 | 2028-09-12 | MB-1502 SS | -72d |  |
| MB-1504 |  | Lab-Technician - 2 | 1170d | 2025-07-01 | 2028-09-12 | MB-1503 SS | -72d |  |
|  | 6 | **Procurement Department** |  | 2025-01-01 | 2028-09-12 |  |  |  |
| MB-1600 |  | Procurement Manager | 1350d | 2025-01-01 | 2028-09-11 | MB-1002 SS | -71d |  |
| MB-1601 |  | Procurement Officer | 1350d | 2025-01-01 | 2028-09-11 | MB-1600 SS | -71d |  |
| MB-1602 |  | Logistics | 1350d | 2025-01-01 | 2028-09-11 | MB-1601 SS | -71d |  |
| MB-1603 |  | Logistics | 1350d | 2025-01-01 | 2028-09-11 | MB-1602 SS | -71d |  |
| MB-1604 |  | Store Incharge | 1200d | 2025-06-01 | 2028-09-12 | MB-1000 SS | -72d |  |
|  | 7 | **Technical Department** |  | 2025-01-01 | 2028-09-12 |  |  |  |
| MB-1702 |  | Geologist Engineer | 1350d | 2025-01-01 | 2028-09-11 | MB-1002 SS | -71d |  |

| ID | WBS | Task | Duration | Start | Finish | Predecessors | Total float | Constraint |
| --- | --- | --- | --- | --- | --- | --- | --- | --- |
| MB-1700 |  | Chief Technical Engineer | 1215d | 2025-05-01 | 2028-08-27 |  | -56d | start on or after 2025-05-01 |
| MB-1701 |  | Technical Engineer | 1215d | 2025-05-01 | 2028-08-27 | MB-1700 SS | -56d |  |
| MB-1703 |  | Geologist Engineer | 1170d | 2025-07-01 | 2028-09-12 | MB-1001 SS | -72d |  |
| MB-1704 |  | Sr. Planning Engineer | 1170d | 2025-07-01 | 2028-09-12 | MB-1703 SS | -72d |  |
| MB-1705 |  | Structure Engineer | 1170d | 2025-07-01 | 2028-09-12 | MB-1704 SS | -72d |  |
| MB-1706 |  | Method Statement Engineer | 1170d | 2025-07-01 | 2028-09-12 | MB-1705 SS | -72d |  |
| MB-1707 |  | Instrument Engineer | 1170d | 2025-07-01 | 2028-09-12 | MB-1706 SS | -72d |  |
| MB-1708 |  | Quantity Survey/Billing Engineer | 1170d | 2025-07-01 | 2028-09-12 | MB-1707 SS | -72d |  |
| MB-1709 |  | Draftman - 1 | 1170d | 2025-07-01 | 2028-09-12 | MB-1708 SS | -72d |  |
|  | 8 | **Admin, Finance & HR Department** |  | 2025-01-01 | 2028-09-12 |  |  |  |
| MB-1801 |  | Admin Excrutive | 1350d | 2025-01-01 | 2028-09-11 | MB-1002 SS | -71d |  |
| MB-1802 |  | Acountant Excrutive | 1350d | 2025-01-01 | 2028-09-11 | MB-1801 SS | -71d |  |
| MB-1803 |  | Acountant Excrutive | 1350d | 2025-01-01 | 2028-09-11 | MB-1802 SS | -71d |  |
| MB-1804 |  | HR Excrutive | 1350d | 2025-01-01 | 2028-09-11 | MB-1803 SS | -71d |  |
| MB-1800 |  | Admin, Finance & HR Manager | 1170d | 2025-07-01 | 2028-09-12 | MB-1001 SS | -72d |  |
| MB-1805 |  | IT Engineer | 1170d | 2025-07-01 | 2028-09-12 | MB-1800 SS | -72d |  |
| MB-1806 |  | Document Control - 2 | 1170d | 2025-07-01 | 2028-09-12 | MB-1805 SS | -72d |  |
|  | 9 | **Survey Department** |  | 2025-01-01 | 2028-09-12 |  |  |  |
| MB-1900 |  | Chief Survey Manager | 1350d | 2025-01-01 | 2028-09-11 | MB-1002 SS | -71d |  |
| MB-1901 |  | Survey Supperintendent | 1350d | 2025-01-01 | 2028-09-11 | MB-1900 SS | -71d |  |
| MB-1902 |  | Survey (Team 1) | 1350d | 2025-01-01 | 2028-09-11 | MB-1901 SS | -71d |  |
| MB-1903 |  | Asst Survey (Team 1) | 1350d | 2025-01-01 | 2028-09-11 | MB-1902 SS | -71d |  |
| MB-1904 |  | Survey (Team 2) | 1170d | 2025-07-01 | 2028-09-12 | MB-1001 SS | -72d |  |
| MB-1905 |  | Asst Survey (Team 2) | 1170d | 2025-07-01 | 2028-09-12 | MB-1904 SS | -72d |  |
| MB-1906 |  | Survey (Team 3) | 1170d | 2025-07-01 | 2028-09-12 | MB-1905 SS | -72d |  |
| MB-1907 |  | Asst Survey (Team 3) | 1170d | 2025-07-01 | 2028-09-12 | MB-1906 SS | -72d |  |
|  | 2 | **Equipment** |  | 2025-01-01 | 2027-09-27 |  |  |  |
| MB-2000 |  | Manitou Lifting Equipment | 1000d | 2025-01-01 | 2027-09-27 |  | 279d |  |
| MB-2001 |  | Normal Shotcrete Machine | 1000d | 2025-01-01 | 2027-09-27 |  | 279d |  |
| MB-2002 |  | Tower Crane no 1 | 1000d | 2025-01-01 | 2027-09-27 |  | 279d |  |
| MB-2003 |  | Tower Crane no 2 | 1000d | 2025-01-01 | 2027-09-27 |  | 279d |  |
| MB-2004 |  | Tower Crane no 3 | 1000d | 2025-01-01 | 2027-09-27 |  | 279d |  |
| MB-2005 |  | Tower Crane no 4 | 1000d | 2025-01-01 | 2027-09-27 |  | 279d |  |
| MB-2006 |  | Grouting Pump Machine | 1000d | 2025-01-01 | 2027-09-27 |  | 279d |  |
| MB-2007 |  | ROC drilling Machine | 1000d | 2025-01-01 | 2027-09-27 |  | 279d |  |
| MB-2008 |  | Shotcrete Machine | 1000d | 2025-01-01 | 2027-09-27 |  | 279d |  |
| MB-2009 |  | Vertical Shaft Boring Machine | 1000d | 2025-01-01 | 2027-09-27 |  | 279d |  |
|  | 3 | **Site Facilities** |  | 2025-01-01 | 2025-08-30 |  |  |  |
| MB-3000 |  | Employer's and Contractor Camp Mitlung | 90d | 2025-01-01 | 2025-03-31 |  | 91d |  |
| MB-3020 |  | Employer's and Contractor Camp Tapethok | 90d | 2025-01-01 | 2025-03-31 | MB-3000 SS | 152d |  |
| MB-3010 |  | Labor Camp at Surge Shaft | 75d | 2025-01-31 | 2025-04-15 | MB-3000 SS+30d | 1174d |  |
| MB-3030 |  | Batching Plant 60m3/hr. at Mitlung | 60d | 2025-05-17 | 2025-07-15 | MB-3000 SS+45d | 0d | finish on 2025-07-15 |
| MB-3040 |  | Crusher Plant 120TPH at Mitlung | 60d | 2025-05-17 | 2025-07-15 |  | 0d | finish on 2025-07-15 |
| MB-3060 |  | Batching Plant No-2 (120m3/hr).at Tapethok | 60d | 2025-07-02 | 2025-08-30 | MB-3020 SS+30d, MB-3070 FF | 1037d |  |
| MB-3070 |  | Crusher Plant (100TPH)at Tapethok | 60d | 2025-07-02 | 2025-08-30 | MB-3020 SS+30d | 0d | finish on 2025-08-30 |
| MB-3050 |  | Batching Plant No-1 (60m3/hr).at Tapethok | 45d | 2025-07-17 | 2025-08-30 | MB-3020 SS+30d, MB-3060 FF | 1037d |  |
|  | III | **Project Management and Monitoring** |  | 2025-01-01 | 2027-01-10 |  |  |  |
| KD-01 |  | Commencement of Development of Construction Programme | 0d | 2025-06-01 | 2025-06-01 |  | 0d | start on 2025-06-01 |
|  | 1 | **Work Schedules** |  | 2025-06-01 | 2025-07-10 |  |  |  |
| CP-1000 |  | Development of Work Breakdown Structure | 10d | 2025-06-01 | 2025-06-10 | KD-01 SS | 1088d |  |
| CP-1010 |  | Preparation of Detailed Work Schedule | 30d | 2025-06-11 | 2025-07-10 | CP-1000 | 1088d |  |
|  | 2 | **Geotechnical Investigation Studies** |  | 2025-06-15 | 2025-06-19 |  |  |  |
| KD-31 |  | Geotechnical Investigation in Headworks | 5d | 2025-06-15 | 2025-06-19 |  | 1109d | start on or after 2025-06-15 |
|  | IFC-DRW | **IFC Drawings** |  | 2025-01-01 | 2026-12-06 |  |  |  |
|  | IFC-LOT2I | **IFC Drawings - Headworks (LOT 2-I)** |  | 2025-01-01 | 2026-12-06 |  |  |  |
| IFC-2101 |  | Issuance of IFC for Cofferdam & River Diversion Works | 20d | 2025-01-01 | 2025-01-20 |  | 539d |  |
| IFC-2102 |  | Issuance of IFC for Barrage & Undersluice (Foundation & Micro-piling) | 30d | 2025-02-20 | 2025-03-21 | IFC-2101 FS+30d | 539d |  |
| IFC-2104 |  | Issuance of IFC for Intake & Gravel Trap (Excavation & Foundation) | 15d | 2025-03-22 | 2025-04-05 | IFC-2102 | 539d |  |
| IFC-2106 |  | Issuance of IFC for Left Bank Flood Walls (All Sections) | 30d | 2025-03-22 | 2025-04-20 | IFC-2102 | 1169d |  |
| IFC-2105 |  | Issuance of IFC for Intake & Gravel Trap (Structural Concrete) | 30d | 2025-07-05 | 2025-08-03 | IFC-2104 FS+90d | 539d |  |
| IFC-2103 |  | Issuance of IFC for Barrage & Undersluice (Structural Concrete) | 45d | 2025-07-20 | 2025-09-02 | IFC-2102 FS+120d | 992d |  |
| IFC-2107 |  | Issuance of IFC for Approach Culvert & Settling Basin (Excavation & Foundation) | 15d | 2025-08-04 | 2025-08-18 | IFC-2105 | 539d |  |
| IFC-2108 |  | Issuance of IFC for Approach Culvert & Settling Basin (Structural Concrete) | 20d | 2026-01-16 | 2026-02-04 | IFC-2107 FS+150d | 539d |  |
| IFC-2109 |  | Issuance of IFC for Energy Dissipator | 45d | 2026-04-06 | 2026-05-20 | IFC-2108 FS+60d | 539d |  |
| IFC-2110 |  | Issuance of IFC for Headpond & CFRD (Excavation & Embankment) | 20d | 2026-05-21 | 2026-06-09 | IFC-2109 | 539d |  |
| IFC-2111 |  | Issuance of IFC for Headpond Lining & Bypass Pipe | 30d | 2026-11-07 | 2026-12-06 | IFC-2110 FS+150d | 539d |  |
|  | IFC-LOT2III | **IFC Drawings - Penstock & Surge (LOT 2-III)** |  | 2025-01-01 | 2026-03-26 |  |  |  |
| IFC-2201 |  | Issuance of IFC for Surge Shaft (Excavation & Support) | 30d | 2025-01-01 | 2025-01-30 |  | 832d |  |
| IFC-2211 |  | Issuance of IFC for Vertical Pressure Shaft (Excavation & Support) | 45d | 2025-01-31 | 2025-03-16 | IFC-2201 | 832d |  |
| IFC-2202 |  | Issuance of IFC for Surge Shaft (Concrete Lining) | 30d | 2025-09-28 | 2025-10-27 | IFC-2201 FS+240d | 944d |  |

| ID | WBS | Task | Duration | Start | Finish | Predecessors | Total float |
| --- | --- | --- | --- | --- | --- | --- | --- |
| IFC-2221 |  | Issuance of IFC for Horizontal Penstock Shaft (Excavation & Support) | 30d | 2025-12-27 | 2026-01-25 | IFC-3501 FS+210d | 800d |
| IFC-2212 |  | Issuance of IFC for Vertical Pressure Shaft (Steel Liner & Concrete) | 30d | 2026-01-11 | 2026-02-09 | IFC-2211 FS+300d | 832d |
| IFC-2222 |  | Issuance of IFC for Horizontal Penstock Shaft (Steel Liner & Concrete) | 15d | 2026-03-12 | 2026-03-26 | IFC-2221 FS+45d | 800d |
|  | IFC-LOT2IV | **IFC Drawings - Powerhouse & Auxiliary (LOT 2-IV)** |  | 2025-04-01 | 2026-09-12 |  |  |
| IFC-3101 |  | Issuance of IFC for Ventilation Tunnel (Excavation & Support) | 30d | 2025-04-01 | 2025-04-30 | IFC-4211 FS+60d | 630d |
| IFC-3501 |  | Issuance of IFC for Access Tunnel to Penstock (Excavation & Support) | 30d | 2025-05-01 | 2025-05-30 | IFC-4211 FS+90d | 800d |
| IFC-3201 |  | Issuance of IFC for Powerhouse Cavern (Excavation & Primary Support) | 30d | 2025-05-31 | 2025-06-29 | IFC-3101 FS+30d | 630d |
| IFC-3301 |  | Issuance of IFC for Transformer Cavern (Excavation & Primary Support) | 40d | 2025-06-30 | 2025-08-08 | IFC-3201 SS+30d | 630d |
| IFC-3202 |  | Issuance of IFC for Powerhouse Cavern (Crane Beam & Arch Concrete) | 40d | 2025-10-28 | 2025-12-06 | IFC-3201 FS+120d | 777d |
| IFC-3302 |  | Issuance of IFC for Transformer Cavern (Structural Concrete) | 45d | 2026-01-06 | 2026-02-19 | IFC-3301 FS+150d | 630d |
| IFC-3401 |  | Issuance of IFC for Cable Tunnel (Excavation & Lining) | 30d | 2026-02-20 | 2026-03-21 | IFC-3302 | 630d |
| IFC-3203 |  | Issuance of IFC for Powerhouse Cavern (Substructure & Draft Tube Concrete) | 30d | 2026-03-07 | 2026-04-05 | IFC-3202 FS+90d | 777d |
| IFC-3601 |  | Issuance of IFC for Drainage Gallery (Excavation & Lining) | 25d | 2026-04-21 | 2026-05-15 | IFC-3401 FS+30d | 630d |
| IFC-3701 |  | Issuance of IFC for Escape Tunnel (Excavation & Lining) | 30d | 2026-08-14 | 2026-09-12 | IFC-3601 FS+90d | 630d |
|  | IFC-LOT2V | **IFC Drawings - Access & Tailrace Tunnels (LOT 2-V)** |  | 2025-01-01 | 2025-12-16 |  |  |
| IFC-4201 |  | Issuance of IFC for Tailrace Tunnel (Portal & Excavation Support) | 30d | 2025-01-01 | 2025-01-30 |  | 954d |
| IFC-4211 |  | Issuance of IFC for Main Access Tunnel (Portal & Excavation Support) | 30d | 2025-01-01 | 2025-01-30 |  | 630d |
| IFC-4202 |  | Issuance of IFC for Tailrace Tunnel (Concrete Lining & Outlet Works) | 20d | 2025-09-28 | 2025-10-17 | IFC-4201 FS+240d | 954d |
| IFC-4212 |  | Issuance of IFC for Main Access Tunnel (Final Lining & Pavement) | 20d | 2025-11-27 | 2025-12-16 | IFC-4211 FS+300d | 894d |
|  | IFC-LOT3 | **IFC Drawings - Hydromechanical Works** |  | 2025-01-01 | 2025-11-26 |  |  |
| IFC-5101 |  | Approval of HM Design for Intake & Undersluice Gates | 60d | 2025-01-01 | 2025-03-01 |  | 907d |
| IFC-5102 |  | Approval of HM Design for Settling Basin & Headpond Gates | 60d | 2025-05-31 | 2025-07-29 | IFC-5101 FS+90d | 907d |
| IFC-5201 |  | Approval of HM Design for Penstock Pipes & Manifolds | 60d | 2025-09-28 | 2025-11-26 | IFC-5102 FS+60d | 907d |
|  | IFC-LOT4 | **IFC Drawings - Electromechanical Works** |  | 2025-01-01 | 2025-09-27 |  |  |
| IFC-6002 |  | Approval of EM Design for Powerhouse Cranes | 45d | 2025-01-01 | 2025-02-14 |  | 967d |
| IFC-6001 |  | Approval of EM Design for Turbine & Generator | 45d | 2025-03-17 | 2025-04-30 | IFC-6002 FS+30d | 967d |
| IFC-6003 |  | Approval of EM Design for Transformers & Switchgear | 60d | 2025-05-31 | 2025-07-29 | IFC-6001 FS+30d | 967d |
| IFC-6004 |  | Approval of EM Design for Balance of Plant (BOP) | 30d | 2025-08-29 | 2025-09-27 | IFC-6003 FS+30d | 967d |
|  | IFC-LOT5 | **IFC Drawings - Transmission Line (LOT 5)** |  | 2025-01-01 | 2025-08-28 |  |  |
| IFC-2501 |  | Issuance of IFC for Transmission Line (Foundations & Access) | 60d | 2025-01-01 | 2025-03-01 |  | 1010d |
| IFC-2502 |  | Issuance of IFC for Transmission Line (Tower & Stringing Details) | 90d | 2025-05-31 | 2025-08-28 | IFC-2501 FS+90d | 1010d |
|  | MS | **Method Statements** |  | 2025-01-21 | 2027-01-10 |  |  |
|  | MS-LOT2I | **Method Statements - Headworks (LOT 2-I)** |  | 2025-01-21 | 2027-01-10 |  |  |
| MS-2I-2101-S |  | Submission of MS for Cofferdam & River Diversion | 21d | 2025-01-21 | 2025-02-10 | IFC-2101 | 1224d |
| MS-2I-2101-A |  | Approval of MS for Cofferdam & River Diversion | 14d | 2025-02-11 | 2025-02-24 | MS-2I-2101-S | 1224d |
| MS-2I-2102-S |  | Submission of MS for Barrage & Undersluice Foundations | 21d | 2025-03-22 | 2025-04-11 | IFC-2102 | 1164d |
| MS-2I-2104-S |  | Submission of MS for Intake & Gravel Trap Foundations | 21d | 2025-04-06 | 2025-04-26 | IFC-2104 | 1149d |
| MS-2I-2102-A |  | Approval of MS for Barrage & Undersluice Foundations | 14d | 2025-04-12 | 2025-04-25 | MS-2I-2102-S | 1164d |
| MS-2I-2104-A |  | Approval of MS for Intake & Gravel Trap Foundations | 14d | 2025-04-27 | 2025-05-10 | MS-2I-2104-S | 1149d |
| MS-2I-2105-S |  | Submission of MS for Intake & Gravel Trap Concrete | 21d | 2025-08-04 | 2025-08-24 | IFC-2105 | 1022d |
| MS-2I-2107-S |  | Submission of MS for Settling Basin Excavation & Foundations | 21d | 2025-08-19 | 2025-09-08 | IFC-2107 | 1014d |
| MS-2I-2105-A |  | Approval of MS for Intake & Gravel Trap Concrete | 21d | 2025-08-25 | 2025-09-14 | MS-2I-2105-S | 1022d |
| MS-2I-2103-S |  | Submission of MS for Barrage & Undersluice Concrete | 21d | 2025-09-03 | 2025-09-23 | IFC-2103 | 992d |
| MS-2I-2107-A |  | Approval of MS for Settling Basin Excavation & Foundations | 14d | 2025-09-09 | 2025-09-22 | MS-2I-2107-S | 1014d |
| MS-2I-2103-A |  | Approval of MS for Barrage & Undersluice Concrete | 21d | 2025-09-24 | 2025-10-14 | MS-2I-2103-S | 992d |
| MS-2I-2108-S |  | Submission of MS for Settling Basin Structural Concrete | 21d | 2026-02-05 | 2026-02-25 | IFC-2108 | 837d |
| MS-2I-2108-A |  | Approval of MS for Settling Basin Structural Concrete | 21d | 2026-02-26 | 2026-03-18 | MS-2I-2108-S | 837d |
| MS-2I-2110-S |  | Submission of MS for Headpond & CFRD Embankment | 21d | 2026-06-10 | 2026-06-30 | IFC-2110 | 712d |
| MS-2I-2110-A |  | Approval of MS for Headpond & CFRD Embankment | 21d | 2026-07-01 | 2026-07-21 | MS-2I-2110-S | 712d |
| MS-2I-2111-S |  | Submission of MS for Headpond Lining & Bypass Pipe | 21d | 2026-12-07 | 2026-12-27 | IFC-2111 | 539d |
| MS-2I-2111-A |  | Approval of MS for Headpond Lining & Bypass Pipe | 14d | 2026-12-28 | 2027-01-10 | MS-2I-2111-S | 539d |
|  | MS-LOT2III | **Method Statements - Penstock & Surge (LOT 2-III)** |  | 2025-01-31 | 2026-04-24 |  |  |
| MS-2III-2201-S |  | Submission of MS for Surge Shaft Excavation | 21d | 2025-01-31 | 2025-02-20 | IFC-2201 | 1214d |
| MS-2III-2201-A |  | Approval of MS for Surge Shaft Excavation | 14d | 2025-02-21 | 2025-03-06 | MS-2III-2201-S | 1214d |
| MS-2III-2211-S |  | Submission of MS for Vertical Pressure Shaft Excavation | 21d | 2025-03-17 | 2025-04-06 | IFC-2211 | 1169d |
| MS-2III-2211-A |  | Approval of MS for Vertical Pressure Shaft Excavation | 14d | 2025-04-07 | 2025-04-20 | MS-2III-2211-S | 1169d |
| MS-2III-2202-S |  | Submission of MS for Surge Shaft Lining | 21d | 2025-10-28 | 2025-11-17 | IFC-2202 | 944d |
| MS-2III-2202-A |  | Approval of MS for Surge Shaft Lining | 14d | 2025-11-18 | 2025-12-01 | MS-2III-2202-S | 944d |
| MS-2III-2221-S |  | Submission of MS for Horizontal Penstock Excavation | 15d | 2026-01-26 | 2026-02-09 | IFC-2221 | 860d |
| MS-2III-2212-S |  | Submission of MS for VPS Steel Liner & Concrete | 21d | 2026-02-10 | 2026-03-02 | IFC-2212 | 832d |
| MS-2III-2221-A |  | Approval of MS for Horizontal Penstock Excavation | 14d | 2026-02-10 | 2026-02-23 | MS-2III-2221-S | 860d |
| MS-2III-2212-A |  | Approval of MS for VPS Steel Liner & Concrete | 21d | 2026-03-03 | 2026-03-23 | MS-2III-2212-S | 832d |
| MS-2III-2222-S |  | Submission of MS for HPS Steel Liner & Concrete | 15d | 2026-03-27 | 2026-04-10 | IFC-2222 | 800d |
| MS-2III-2222-A |  | Approval of MS for HPS Steel Liner & Concrete | 14d | 2026-04-11 | 2026-04-24 | MS-2III-2222-S | 800d |
|  | MS-LOT2IV | **Method Statements - Powerhouse & Auxiliary (LOT 2-IV)** |  | 2025-05-01 | 2026-10-11 |  |  |
| MS-2IV-3101-S |  | Submission of MS for Ventilation Tunnel | 15d | 2025-05-01 | 2025-05-15 | IFC-3101 | 1130d |
| MS-2IV-3101-A |  | Approval of MS for Ventilation Tunnel | 14d | 2025-05-16 | 2025-05-29 | MS-2IV-3101-S | 1130d |
| MS-2IV-3501-S |  | Submission of MS for Access Tunnel to Penstock | 21d | 2025-05-31 | 2025-06-20 | IFC-3501 | 1094d |
| MS-2IV-3501-A |  | Approval of MS for Access Tunnel to Penstock | 14d | 2025-06-21 | 2025-07-04 | MS-2IV-3501-S | 1094d |
| MS-2IV-3201-S |  | Submission of MS for Powerhouse Cavern Excavation | 21d | 2025-06-30 | 2025-07-20 | IFC-3201 | 1064d |

| ID | WBS | Task | Duration | Start | Finish | Predecessors | Total float | Constraint |
| --- | --- | --- | --- | --- | --- | --- | --- | --- |
| MS-2IV-3201-A |  | Approval of MS for Powerhouse Cavern Excavation | 14d | 2025-07-21 | 2025-08-03 | MS-2IV-3201-S | 1064d |  |
| MS-2IV-3301-S |  | Submission of MS for Transformer Cavern Excavation | 21d | 2025-08-09 | 2025-08-29 | IFC-3301 | 1024d |  |
| MS-2IV-3301-A |  | Approval of MS for Transformer Cavern Excavation | 14d | 2025-08-30 | 2025-09-12 | MS-2IV-3301-S | 1024d |  |
| MS-2IV-3202-S |  | Submission of MS for PHC Crane Beam & Arch Concrete | 21d | 2025-12-07 | 2025-12-27 | IFC-3202 | 904d |  |
| MS-2IV-3202-A |  | Approval of MS for PHC Crane Beam & Arch Concrete | 14d | 2025-12-28 | 2026-01-10 | MS-2IV-3202-S | 904d |  |
| MS-2IV-3302-S |  | Submission of MS for TC Structural Concrete | 21d | 2026-02-20 | 2026-03-12 | IFC-3302 | 829d |  |
| MS-2IV-3302-A |  | Approval of MS for TC Structural Concrete | 14d | 2026-03-13 | 2026-03-26 | MS-2IV-3302-S | 829d |  |
| MS-2IV-3401-S |  | Submission of MS for Cable Tunnel | 15d | 2026-03-22 | 2026-04-05 | IFC-3401 | 805d |  |
| MS-2IV-3203-S |  | Submission of MS for PHC Substructure & Draft Tube Concrete | 21d | 2026-04-06 | 2026-04-26 | IFC-3203 | 777d |  |
| MS-2IV-3401-A |  | Approval of MS for Cable Tunnel | 14d | 2026-04-06 | 2026-04-19 | MS-2IV-3401-S | 805d |  |
| MS-2IV-3203-A |  | Approval of MS for PHC Substructure & Draft Tube Concrete | 21d | 2026-04-27 | 2026-05-17 | MS-2IV-3203-S | 777d |  |
| MS-2IV-3601-S |  | Submission of MS for Drainage Gallery | 15d | 2026-05-16 | 2026-05-30 | IFC-3601 | 750d |  |
| MS-2IV-3601-A |  | Approval of MS for Drainage Gallery | 14d | 2026-05-31 | 2026-06-13 | MS-2IV-3601-S | 750d |  |
| MS-2IV-3701-S |  | Submission of MS for Escape Tunnel | 15d | 2026-09-13 | 2026-09-27 | IFC-3701 | 630d |  |
| MS-2IV-3701-A |  | Approval of MS for Escape Tunnel | 14d | 2026-09-28 | 2026-10-11 | MS-2IV-3701-S | 630d |  |
|  | MS-LOT2V | **Method Statements - Access & Tailrace Tunnels (LOT 2-V)** |  | 2025-01-31 | 2026-01-20 |  |  |  |
| MS-2V-4201-S |  | Submission of MS for Tailrace Tunnel (Portal & Excavation) | 21d | 2025-01-31 | 2025-02-20 | IFC-4201 | 1214d |  |
| MS-2V-4211-S |  | Submission of MS for Main Access Tunnel (Portal & Excavation) | 21d | 2025-01-31 | 2025-02-20 | IFC-4211 | 1214d |  |
| MS-2V-4201-A |  | Approval of MS for Tailrace Tunnel (Portal & Excavation) | 14d | 2025-02-21 | 2025-03-06 | MS-2V-4201-S | 1214d |  |
| MS-2V-4211-A |  | Approval of MS for Main Access Tunnel (Portal & Excavation) | 14d | 2025-02-21 | 2025-03-06 | MS-2V-4211-S | 1214d |  |
| MS-2V-4202-S |  | Submission of MS for Tailrace Tunnel (Lining & Outlet) | 21d | 2025-10-18 | 2025-11-07 | IFC-4202 | 954d |  |
| MS-2V-4202-A |  | Approval of MS for Tailrace Tunnel (Lining & Outlet) | 14d | 2025-11-08 | 2025-11-21 | MS-2V-4202-S | 954d |  |
| MS-2V-4212-S |  | Submission of MS for Main Access Tunnel (Lining & Pavement) | 21d | 2025-12-17 | 2026-01-06 | IFC-4212 | 894d |  |
| MS-2V-4212-A |  | Approval of MS for Main Access Tunnel (Lining & Pavement) | 14d | 2026-01-07 | 2026-01-20 | MS-2V-4212-S | 894d |  |
|  | MS-LOT3 | **Method Statements - Hydromechanical Works** |  | 2025-03-02 | 2026-01-07 |  |  |  |
| MS-3-5101-S |  | Submission of MS for Fabrication & Installation of Intake & Undersluice Gates | 21d | 2025-03-02 | 2025-03-22 | IFC-5101 | 1177d |  |
| MS-3-5101-A |  | Approval of MS for Fabrication & Installation of Intake & Undersluice Gates | 21d | 2025-03-23 | 2025-04-12 | MS-3-5101-S | 1177d |  |
| MS-3-5102-S |  | Submission of MS for Fabrication & Installation of Waterway Gates | 21d | 2025-07-30 | 2025-08-19 | IFC-5102 | 1027d |  |
| MS-3-5102-A |  | Approval of MS for Fabrication & Installation of Waterway Gates | 21d | 2025-08-20 | 2025-09-09 | MS-3-5102-S | 1027d |  |
| MS-3-5201-S |  | Submission of MS for Fabrication & Installation of Penstock | 21d | 2025-11-27 | 2025-12-17 | IFC-5201 | 907d |  |
| MS-3-5201-A |  | Approval of MS for Fabrication & Installation of Penstock | 21d | 2025-12-18 | 2026-01-07 | MS-3-5201-S | 907d |  |
|  | MS-LOT4 | **Method Statements - Electromechanical Works** |  | 2025-02-15 | 2025-11-08 |  |  |  |
| MS-4-6002-S |  | Submission of MS for Installation of Powerhouse Cranes | 15d | 2025-02-15 | 2025-03-01 | IFC-6002 | 1205d |  |
| MS-4-6002-A |  | Approval of MS for Installation of Powerhouse Cranes | 14d | 2025-03-02 | 2025-03-15 | MS-4-6002-S | 1205d |  |
| MS-4-6001-S |  | Submission of MS for Installation of Turbine & Generator | 21d | 2025-05-01 | 2025-05-21 | IFC-6001 | 1117d |  |
| MS-4-6001-A |  | Approval of MS for Installation of Turbine & Generator | 21d | 2025-05-22 | 2025-06-11 | MS-4-6001-S | 1117d |  |
| MS-4-6003-S |  | Submission of MS for Installation of Transformers & Switchgear | 21d | 2025-07-30 | 2025-08-19 | IFC-6003 | 1027d |  |
| MS-4-6003-A |  | Approval of MS for Installation of Transformers & Switchgear | 21d | 2025-08-20 | 2025-09-09 | MS-4-6003-S | 1027d |  |
| MS-4-6004-S |  | Submission of MS for Installation of Balance of Plant (BOP) | 21d | 2025-09-28 | 2025-10-18 | IFC-6004 | 967d |  |
| MS-4-6004-A |  | Approval of MS for Installation of Balance of Plant (BOP) | 21d | 2025-10-19 | 2025-11-08 | MS-4-6004-S | 967d |  |
|  | MS-LOT5 | **Method Statements - Transmission Line (LOT 5)** |  | 2025-03-02 | 2025-09-26 |  |  |  |
| MS-5-2501-S |  | Submission of MS for TL Foundations & Access | 15d | 2025-03-02 | 2025-03-16 | IFC-2501 | 1190d |  |
| MS-5-2501-A |  | Approval of MS for TL Foundations & Access | 14d | 2025-03-17 | 2025-03-30 | MS-5-2501-S | 1190d |  |
| MS-5-2502-S |  | Submission of MS for TL Tower Erection & Stringing | 15d | 2025-08-29 | 2025-09-12 | IFC-2502 | 1010d |  |
| MS-5-2502-A |  | Approval of MS for TL Tower Erection & Stringing | 14d | 2025-09-13 | 2025-09-26 | MS-5-2502-S | 1010d |  |
|  | 2 | **Construction of Main Civil Works** |  | 2025-01-01 | 2028-03-24 |  |  |  |
|  | 1 | **Construction Headworks (LOT 2-I)** |  | 2025-01-01 | 2028-03-24 |  |  |  |
|  | 1.1 | **Cofferdam & River Diversion Works** |  | 2025-01-01 | 2025-11-01 |  |  |  |
| KD-04 |  | Commencement of River Diversion Works | 0d | 2025-11-01 | 2025-11-01 |  | 0d | start on 2025-11-01 |
| L-1000 |  | River Diversion Works | 0d | 2025-11-01 | 2025-11-01 | KD-04 SS | 975d |  |
|  | 1 | **Preparatory & Site Works** |  | 2025-01-01 | 2025-06-19 |  |  |  |
| CD-1010 |  | Mobilization of Specialized Plant & Personnel for Cofferdam Works | 20d | 2025-01-01 | 2025-01-20 |  | 997d |  |
| CD-1020 |  | Procurement and Delivery of Boulders and Clay | 120d | 2025-01-21 | 2025-05-20 | CD-1010 | 1139d |  |
| CD-1030 |  | Procurement and Delivery of Geomembrane and Filter Fabric | 150d | 2025-01-21 | 2025-06-19 | CD-1010 | 997d |  |
|  | 2 | **River Control & Foundation Works** |  | 2025-01-21 | 2025-04-05 |  |  |  |
| CD-2010 |  | Survey, Setting Out, and Site Clearing for Cofferdam & Diversion | 15d | 2025-01-21 | 2025-02-04 | CD-1010 | 1184d |  |
| CD-2020 |  | Construct Temporary Diversion Channel and Dewatering System | 45d | 2025-02-05 | 2025-03-21 | CD-2010 | 1184d |  |
| CD-2030 |  | Foundation Preparation and Cleanup | 15d | 2025-03-22 | 2025-04-05 | CD-2020 | 1184d |  |
|  | 3 | **Cofferdam Embankment Construction** |  | 2025-01-01 | 2025-05-30 |  |  |  |
| CD-3010 |  | Earthwork: Filling of Muck for Cofferdam Body (Layer by Layer Compaction) | 150d | 2025-01-01 | 2025-05-30 |  | 979d |  |
| CD-3020 |  | Core Construction: Laying of Impervious Clay Layer | 130d | 2025-01-21 | 2025-05-30 | CD-3010 SS+20d | 1129d |  |
|  | 4 | **Protection & Surface Works** |  | 2025-06-20 | 2025-09-12 |  |  |  |
| CD-4010 |  | Protection Layers: Install Graded Filter, Plastic Liner & Geomembrane | 40d | 2025-06-20 | 2025-07-29 | CD-3010, CD-1030 | 997d |  |
| CD-4020 |  | Surface Works: Boulder Lining and Stone Pitching | 45d | 2025-07-30 | 2025-09-12 | CD-4010 | 997d |  |
|  | 5 | **Finalization & Inspection** |  | 2025-05-31 | 2025-10-27 |  |  |  |
| CD-5010 |  | Installation of Instrumentation (Piezometers) | 150d | 2025-05-31 | 2025-10-27 | CD-3010 | 979d |  |
| CD-5020 |  | Final Grading, Site Cleanup, and Inspection | 17d | 2025-09-13 | 2025-09-29 | CD-4020 | 997d |  |
| CD-5030 |  | Demobilization of Cofferdam-specific resources | 10d | 2025-09-30 | 2025-10-09 | CD-5020 | 997d |  |
|  | 1.2 | **Undersluice and Barrage** |  | 2025-12-31 | 2027-11-12 |  |  |  |
| A-1030 |  | Foundation Prep & Excavation | 228d | 2025-12-31 | 2026-08-15 | KD-05 SS | 233d |  |

| ID | WBS | Task | Duration | Start | Finish | Predecessors | Total float | Constraint |
| --- | --- | --- | --- | --- | --- | --- | --- | --- |
| KD-05 |  | Commencement of Construction of Barrage Structures | 0d | 2025-12-31 | 2025-12-31 |  | 0d | start on 2025-12-31 |
| L-1010 |  | Undersluics and Barrage | 682d | 2025-12-31 | 2027-11-12 | KD-05 SS | 233d |  |
| A-1040 |  | Concrete Works for Undersluice & Barrage | 227d | 2026-08-16 | 2027-03-30 | A-1030 | 233d |  |
| A-1050 |  | Spillway & Right Bank Flood Wall Construction | 227d | 2027-03-31 | 2027-11-12 | A-1040, L-1010 FF | 233d |  |
|  | 1.3 | **Intake & Gravel Trap** |  | 2025-12-31 | 2027-03-02 |  |  |  |
| A-1060 |  | Excavation for Intake & Gravel Trap | 143d | 2025-12-31 | 2026-05-22 | KD-06 SS | 488d |  |
| KD-06 |  | Commencement of Construction of Intake Structures | 0d | 2025-12-31 | 2025-12-31 |  | 0d | start on 2025-12-31 |
| A-1070 |  | Intake Structure Concrete Works | 142d | 2026-05-23 | 2026-10-11 | A-1060 | 488d |  |
| A-1080 |  | Gravel Trap & Spillway Construction | 142d | 2026-10-12 | 2027-03-02 | A-1070 | 488d |  |
|  | 1.4 | **Flood Walls** |  | 2025-12-31 | 2027-09-16 |  |  |  |
| A-1090 |  | Excavate for US Left Bank Wall | 209d | 2025-12-31 | 2026-07-27 | KD-07 SS | 290d |  |
| KD-07 |  | Commencement of Construction of Upstream Flood Walls | 0d | 2025-12-31 | 2025-12-31 |  | 0d | start on 2025-12-31 |
| A-1100 |  | Construct US Left Bank Wall | 208d | 2026-07-28 | 2027-02-20 | A-1090 | 290d |  |
| A-1110 |  | Construct DS Left Bank Wall to Sill | 208d | 2027-02-21 | 2027-09-16 | A-1100 | 290d |  |
|  | 1.5 | **DS Left Bank Flood Wall** |  | 2026-03-01 | 2027-11-15 |  |  |  |
| A-1120 |  | Excavate Wall Foundation Post-Sill | 313d | 2026-03-01 | 2027-01-07 | KD-08 SS | 230d |  |
| KD-08 |  | Commencement of Construction of Downstream Flood Walls | 0d | 2026-03-01 | 2026-03-01 |  | 0d | start on 2026-03-01 |
| A-1130 |  | Construct Flood Wall Post-Sill | 312d | 2027-01-08 | 2027-11-15 | A-1120 | 230d |  |
|  | 1.6 | **Approach Culvert & Settling Basin** |  | 2025-12-31 | 2028-03-24 |  |  |  |
| A-1140 |  | Approach Culvert Excavation | 272d | 2025-12-31 | 2026-09-28 | KD-09 SS | 100d |  |
| KD-09 |  | Commencement of Approach Culvert and Settling Basin | 0d | 2025-12-31 | 2025-12-31 |  | 0d | start on 2025-12-31 |
| A-1150 |  | Settling Basin Construction | 271d | 2026-09-29 | 2027-06-26 | A-1140 | 100d |  |
| A-1160 |  | Energy Dissipator & Spillway Construction | 272d | 2027-06-27 | 2028-03-24 | A-1150 | 100d |  |
|  | 1.7 | **Headpond & Bypass Pipe** |  | 2025-12-31 | 2027-11-30 |  |  |  |
| A-1170 |  | Headpond Excavation & Prep | 280d | 2025-12-31 | 2026-10-06 | KD-10 SS | 215d |  |
| KD-10 |  | Commencement of Headpond and Bypass Pipe | 0d | 2025-12-31 | 2025-12-31 |  | 0d | start on 2025-12-31 |
| A-1180 |  | Headpond Concrete & Lining | 210d | 2026-10-07 | 2027-05-04 | A-1170 | 215d |  |
| A-1190 |  | Bypass Pipe Installation & Connection | 210d | 2027-05-05 | 2027-11-30 | A-1180 | 215d |  |
|  | 2 | **Construction of Surge & Penstock (LOT 2-III)** |  | 2025-11-01 | 2028-01-09 |  |  |  |
|  | 2.1 | **Surge Shaft & Connecting Tunnel** |  | 2025-11-01 | 2027-01-04 |  |  |  |
| A-1200 |  | Surge Shaft Excavation | 215d | 2025-11-01 | 2026-06-03 | KD-11 SS | 545d |  |
| KD-11 |  | Commencement of Construction of Surga Shaft and Surge Tunnel | 0d | 2025-11-01 | 2025-11-01 |  | 0d | start on 2025-11-01 |
| A-1210 |  | Connecting Tunnel Excavation & Support | 215d | 2026-06-04 | 2027-01-04 | A-1200 | 545d |  |
|  | 2.2 | **Vertical Pressure Shaft (VPS)** |  | 2025-11-01 | 2028-01-09 |  |  |  |
| A-1220 |  | VPS Site Prep & Raise Boring | 400d | 2025-11-01 | 2026-12-05 | KD-12 SS | 175d |  |
| KD-12 |  | Commencement of Construction of Vertical Pressure Shaft | 0d | 2025-11-01 | 2025-11-01 |  | 0d | start on 2025-11-01 |
| A-1230 |  | VPS Steel Lining & Installation | 400d | 2026-12-06 | 2028-01-09 | A-1220 | 175d |  |
|  | 2.3 | **Penstock Tunnel (HPS)** |  | 2026-01-25 | 2026-04-17 |  |  |  |
| A-1240 |  | HPS Excavation & Support | 42d | 2026-01-25 | 2026-03-07 | KD-13 SS | 807d |  |
| KD-13 |  | Commencement of Construction of Penstock Tunnel | 0d | 2026-01-25 | 2026-01-25 |  | 0d | start on 2026-01-25 |
| A-1250 |  | HPS Concrete Lining & Finishing | 41d | 2026-03-08 | 2026-04-17 | A-1240 | 807d |  |
|  | 3 | **Construction of Powerhouse Caverns (LOT 2-IV)** |  | 2025-08-13 | 2027-07-31 |  |  |  |
|  | 3.1 | **Ventilation Tunnel to PHC & TC** |  | 2025-08-13 | 2025-11-30 |  |  |  |
| A-1260 |  | Ventilation Tunnel Excavation | 55d | 2025-08-13 | 2025-10-06 | KD-14 SS | 945d |  |
| KD-14 |  | Commencement of Construction of Ventilation to PHC and TC | 0d | 2025-08-13 | 2025-08-13 |  | 0d | start on 2025-08-13 |
| A-1270 |  | Ventilation Tunnel Lining & Systems | 55d | 2025-10-07 | 2025-11-30 | A-1260 | 945d |  |
|  | 3.2 | **Powerhouse Cavern (PHC)** |  | 2025-11-16 | 2027-07-31 |  |  |  |
| A-1280 |  | PHC Cavern Excavation & Benching | 312d | 2025-11-16 | 2026-09-23 | KD-15 SS | 337d |  |
| KD-15 |  | Commencement of Construction of Powerhouse Cavern | 0d | 2025-11-16 | 2025-11-16 |  | 0d | start on 2025-11-16 |
| A-1290 |  | PHC Cavern Concrete & Structural Works | 311d | 2026-09-24 | 2027-07-31 | A-1280 | 337d |  |
|  | 3.3 | **Transformer Cavern (TC)** |  | 2026-01-05 | 2027-07-27 |  |  |  |
| A-1300 |  | TC Cavern Excavation & Support | 285d | 2026-01-05 | 2026-10-16 | KD-16 SS | 341d |  |
| KD-16 |  | Commencement of Construction of Transformer Cavern | 0d | 2026-01-05 | 2026-01-05 |  | 0d | start on 2026-01-05 |
| A-1310 |  | TC Cavern Concrete & Finishing | 284d | 2026-10-17 | 2027-07-27 | A-1300 | 341d |  |
|  | 3.4 | **Cable Tunnel** |  | 2026-11-04 | 2026-12-13 |  |  |  |
| A-1320 |  | Cable Tunnel Excavation & Lining | 40d | 2026-11-04 | 2026-12-13 | KD-17 SS | 567d |  |
| KD-17 |  | Commencement of Construction of Cable Tunnel | 0d | 2026-11-04 | 2026-11-04 |  | 0d | start on 2026-11-04 |
|  | 3.5 | **Access Tunnel to Penstock Shaft** |  | 2025-09-12 | 2026-09-29 |  |  |  |
| A-1330 |  | Access Tunnel Excavation | 193d | 2025-09-12 | 2026-03-23 | KD-18 SS | 642d |  |
| KD-18 |  | Commencement of Construction of Access Tunnel to Penstock Shaft | 0d | 2025-09-12 | 2025-09-12 |  | 0d | start on 2025-09-12 |
| A-1340 |  | Access Tunnel Lining & Finishing | 190d | 2026-03-24 | 2026-09-29 | A-1330 | 642d |  |
|  | 3.6 | **Drainage Galley** |  | 2026-11-04 | 2027-07-21 |  |  |  |
| A-1350 |  | Drainage Galley Excavation | 130d | 2026-11-04 | 2027-03-13 | KD-19 SS | 347d |  |
| KD-19 |  | Commencement of Construction of Drainage Gallery | 0d | 2026-11-04 | 2026-11-04 |  | 0d | start on 2026-11-04 |
| A-1360 |  | Drainage Galley Concrete Works | 130d | 2027-03-14 | 2027-07-21 | A-1350 | 347d |  |
|  | 3.7 | **Escape Tunnel** |  | 2027-03-24 | 2027-07-31 |  |  |  |
| A-1370 |  | Escape Tunnel Excavation & Support | 65d | 2027-03-24 | 2027-05-27 | KD-20 SS | 337d |  |
| KD-20 |  | Commencement of Construction of Escape Tunnel | 0d | 2027-03-24 | 2027-03-24 |  | 0d | start on 2027-03-24 |
| A-1380 |  | Escape Tunnel Concrete & Finishes | 65d | 2027-05-28 | 2027-07-31 | A-1370 | 337d |  |
|  | 4 | **Construction of Tunnels (LOT 2-V)** |  | 2025-02-14 | 2027-10-24 |  |  |  |

| ID | WBS | Task | Duration | Start | Finish | Predecessors | Total float | Constraint |
| --- | --- | --- | --- | --- | --- | --- | --- | --- |
|  | 4.1 | **Main Access Tunnel** |  | 2025-02-14 | 2027-10-24 |  |  |  |
| A-1390 |  | Tunnel Boring Machine (TBM) Mobilization | 330d | 2025-02-14 | 2026-01-09 | KD-21 SS | 252d |  |
| KD-21 |  | Commencement of Construction of Main Access Tunnel | 0d | 2025-02-14 | 2025-02-14 |  | 0d | start on 2025-02-14 |
| A-1400 |  | Main Access Tunnel Boring | 330d | 2026-01-10 | 2026-12-05 | A-1390 | 252d |  |
| A-1410 |  | Tunnel Finishing & Demobilization | 323d | 2026-12-06 | 2027-10-24 | A-1400 | 252d |  |
|  | 4.2 | **Tailrace Channel (TRC)** |  | 2025-02-14 | 2027-02-07 |  |  |  |
| A-1420 |  | TRC Excavation & Earthworks | 363d | 2025-02-14 | 2026-02-11 | KD-22 SS | 511d |  |
| KD-22 |  | Commencement of Construction of TRC | 0d | 2025-02-14 | 2025-02-14 |  | 0d | start on 2025-02-14 |
| A-1430 |  | TRC Concrete Lining & Structural Works | 361d | 2026-02-12 | 2027-02-07 | A-1420 | 511d |  |
|  | 3 | **Construction of Hydromechanical Works (LOT-3)** |  | 2026-07-21 | 2028-03-24 |  |  |  |
|  | 5.1 | **Gates** |  | 2026-07-21 | 2028-03-24 |  |  |  |
| A-1440 |  | Procure & Fabricate Gates | 307d | 2026-07-21 | 2027-05-23 | KD-23 SS | 100d |  |
| KD-23 |  | Commencement of Hydromechanical Works (Gates) | 0d | 2026-07-21 | 2026-07-21 |  | 0d | start on 2026-07-21 |
| A-1450 |  | Install Gates & Hoisting Equipment | 306d | 2027-05-24 | 2028-03-24 | A-1440 | 100d |  |
|  | 5.2 | **Penstock Pipe** |  | 2026-07-27 | 2027-01-02 |  |  |  |
| A-1460 |  | Procure & Deliver Penstock Pipe | 80d | 2026-07-27 | 2026-10-14 | KD-24 SS | 547d |  |
| KD-24 |  | Commencement of Construction of Penstock Pipe | 0d | 2026-07-27 | 2026-07-27 |  | 0d | start on 2026-07-27 |
| A-1470 |  | Install & Weld Penstock Pipe | 80d | 2026-10-15 | 2027-01-02 | A-1460 | 547d |  |
|  | 4 | **Construction of Electromechanical Works (LOT-4)** |  | 2026-12-04 | 2028-05-01 |  |  |  |
|  | 6.1 | **Electromechanical Works** |  | 2026-12-04 | 2028-05-01 |  |  |  |
| A-1480 |  | Procure Turbines & Generators | 258d | 2026-12-04 | 2027-08-18 | KD-25 SS | 62d |  |
| KD-25 |  | Commencement of Electromechanical Works | 0d | 2026-12-04 | 2026-12-04 |  | 62d | start on or after 2026-12-04 |
| A-1490 |  | Install Main Electromechanical Equipment | 257d | 2027-08-19 | 2028-05-01 | A-1480 | 62d |  |
|  | 5 | **Transmission Line Works (LOT-5)** |  | 2027-01-01 | 2027-11-08 |  |  |  |
|  | 7.1 | **Transmission Line Works** |  | 2027-01-01 | 2027-11-08 |  |  |  |
| A-1500 |  | Survey Route & Clear Right-of-Way | 105d | 2027-01-01 | 2027-04-15 | KD-26 SS | 237d |  |
| KD-26 |  | Commencement of Transmission Line Works | 0d | 2027-01-01 | 2027-01-01 |  | 237d | start on or after 2027-01-01 |
| A-1510 |  | Construct Tower Foundations | 103d | 2027-04-16 | 2027-07-27 | A-1500 | 237d |  |
| A-1520 |  | Erect Towers & String Conductors | 104d | 2027-07-28 | 2027-11-08 | A-1510 | 237d |  |
|  | 6 | **Testing & Commissioning** |  | 2028-05-02 | 2028-07-01 |  |  |  |
|  | 8.1 | **System Testing & Commissioning** |  | 2028-05-02 | 2028-07-01 |  |  |  |
| A-1530 |  | Pre-commissioning Checks | 31d | 2028-05-02 | 2028-06-01 | KD-27 SS | 1d |  |
| KD-27 |  | Commencement of Construction of Penstock Pipe | 0d | 2028-05-02 | 2028-05-02 |  | 1d | start on or after 2028-05-02 |
| A-1540 |  | Wet & Dry Commissioning | 30d | 2028-06-02 | 2028-07-01 | A-1530 | 1d |  |

## Version 2 (data date 2025-01-01, saved 2025-06-22)

Note of the change: execution phase

Last finish stays 2028-09-15.

Added:

| ID | Task | Start | Finish |
| --- | --- | --- | --- |
| III | **Development of Construction Programme** | 2025-06-01 | 2025-07-10 |

Removed: Project Management and Monitoring; Method Statements; Method Statements - Headworks (LOT 2-I); MS-2I-2101-S Submission of MS for Cofferdam & River Diversion; MS-2I-2101-A Approval of MS for Cofferdam & River Diversion; MS-2I-2102-S Submission of MS for Barrage & Undersluice Foundations; MS-2I-2104-S Submission of MS for Intake & Gravel Trap Foundations; MS-2I-2102-A Approval of MS for Barrage & Undersluice Foundations; MS-2I-2104-A Approval of MS for Intake & Gravel Trap Foundations; MS-2I-2105-S Submission of MS for Intake & Gravel Trap Concrete; MS-2I-2107-S Submission of MS for Settling Basin Excavation & Foundations; MS-2I-2105-A Approval of MS for Intake & Gravel Trap Concrete; MS-2I-2103-S Submission of MS for Barrage & Undersluice Concrete; MS-2I-2107-A Approval of MS for Settling Basin Excavation & Foundations; MS-2I-2103-A Approval of MS for Barrage & Undersluice Concrete; MS-2I-2108-S Submission of MS for Settling Basin Structural Concrete; MS-2I-2108-A Approval of MS for Settling Basin Structural Concrete; MS-2I-2110-S Submission of MS for Headpond & CFRD Embankment; MS-2I-2110-A Approval of MS for Headpond & CFRD Embankment; MS-2I-2111-S Submission of MS for Headpond Lining & Bypass Pipe; MS-2I-2111-A Approval of MS for Headpond Lining & Bypass Pipe; Method Statements - Penstock & Surge (LOT 2-III); MS-2III-2201-S Submission of MS for Surge Shaft Excavation; MS-2III-2201-A Approval of MS for Surge Shaft Excavation; MS-2III-2211-S Submission of MS for Vertical Pressure Shaft Excavation; MS-2III-2211-A Approval of MS for Vertical Pressure Shaft Excavation; MS-2III-2202-S Submission of MS for Surge Shaft Lining; MS-2III-2202-A Approval of MS for Surge Shaft Lining; MS-2III-2221-S Submission of MS for Horizontal Penstock Excavation; MS-2III-2212-S Submission of MS for VPS Steel Liner & Concrete; MS-2III-2221-A Approval of MS for Horizontal Penstock Excavation; MS-2III-2212-A Approval of MS for VPS Steel Liner & Concrete; MS-2III-2222-S Submission of MS for HPS Steel Liner & Concrete; MS-2III-2222-A Approval of MS for HPS Steel Liner & Concrete; Method Statements - Powerhouse & Auxiliary (LOT 2-IV); MS-2IV-3101-S Submission of MS for Ventilation Tunnel; MS-2IV-3101-A Approval of MS for Ventilation Tunnel; MS-2IV-3501-S Submission of MS for Access Tunnel to Penstock; MS-2IV-3501-A Approval of MS for Access Tunnel to Penstock; MS-2IV-3201-S Submission of MS for Powerhouse Cavern Excavation; MS-2IV-3201-A Approval of MS for Powerhouse Cavern Excavation; MS-2IV-3301-S Submission of MS for Transformer Cavern Excavation; MS-2IV-3301-A Approval of MS for Transformer Cavern Excavation; MS-2IV-3202-S Submission of MS for PHC Crane Beam & Arch Concrete; MS-2IV-3202-A Approval of MS for PHC Crane Beam & Arch Concrete; MS-2IV-3302-S Submission of MS for TC Structural Concrete; MS-2IV-3302-A Approval of MS for TC Structural Concrete; MS-2IV-3401-S Submission of MS for Cable Tunnel; MS-2IV-3203-S Submission of MS for PHC Substructure & Draft Tube Concrete; MS-2IV-3401-A Approval of MS for Cable Tunnel; MS-2IV-3203-A Approval of MS for PHC Substructure & Draft Tube Concrete; MS-2IV-3601-S Submission of MS for Drainage Gallery; MS-2IV-3601-A Approval of MS for Drainage Gallery; MS-2IV-3701-S Submission of MS for Escape Tunnel; MS-2IV-3701-A Approval of MS for Escape Tunnel; Method Statements - Access & Tailrace Tunnels (LOT 2-V); MS-2V-4201-S Submission of MS for Tailrace Tunnel (Portal & Excavation); MS-2V-4211-S Submission of MS for Main Access Tunnel (Portal & Excavation); MS-2V-4201-A Approval of MS for Tailrace Tunnel (Portal & Excavation); MS-2V-4211-A Approval of MS for Main Access Tunnel (Portal & Excavation); MS-2V-4202-S Submission of MS for Tailrace Tunnel (Lining & Outlet); MS-2V-4202-A Approval of MS for Tailrace Tunnel (Lining & Outlet); MS-2V-4212-S Submission of MS for Main Access Tunnel (Lining & Pavement); MS-2V-4212-A Approval of MS for Main Access Tunnel (Lining & Pavement); Method Statements - Hydromechanical Works; MS-3-5101-S Submission of MS for Fabrication & Installation of Intake & Undersluice Gates; MS-3-5101-A Approval of MS for Fabrication & Installation of Intake & Undersluice Gates; MS-3-5102-S Submission of MS for Fabrication & Installation of Waterway Gates; MS-3-5102-A Approval of MS for Fabrication & Installation of Waterway Gates; MS-3-5201-S Submission of MS for Fabrication & Installation of Penstock; MS-3-5201-A Approval of MS for Fabrication & Installation of Penstock; Method Statements - Electromechanical Works; MS-4-6002-S Submission of MS for Installation of Powerhouse Cranes; MS-4-6002-A Approval of MS for Installation of Powerhouse Cranes; MS-4-6001-S Submission of MS for Installation of Turbine & Generator; MS-4-6001-A Approval of MS for Installation of Turbine & Generator; MS-4-6003-S Submission of MS for Installation of Transformers & Switchgear; MS-4-6003-A Approval of MS for Installation of Transformers & Switchgear; MS-4-6004-S Submission of MS for Installation of Balance of Plant (BOP); MS-4-6004-A Approval of MS for Installation of Balance of Plant (BOP); Method Statements - Transmission Line (LOT 5); MS-5-2501-S Submission of MS for TL Foundations & Access; MS-5-2501-A Approval of MS for TL Foundations & Access; MS-5-2502-S Submission of MS for TL Tower Erection & Stringing; MS-5-2502-A Approval of MS for TL Tower Erection & Stringing

Changed:

| ID | Task | Start | Finish | Duration | Total float |
| --- | --- | --- | --- | --- | --- |
| IFC-DRW | **IFC Drawings** | 2025-01-01 → none | 2026-12-06 → none |  |  |
| IFC-LOT2I | **IFC Drawings - Headworks (LOT 2-I)** | 2025-01-01 → none | 2026-12-06 → none |  |  |
| IFC-2101 | Issuance of IFC for Cofferdam & River Diversion Works | 2025-01-01 → none | 2025-01-20 → none | 20d → 0d | 539d → none |
| IFC-2102 | Issuance of IFC for Barrage & Undersluice (Foundation & Micro-piling) | 2025-02-20 → none | 2025-03-21 → none | 30d → 0d | 539d → none |
| IFC-2103 | Issuance of IFC for Barrage & Undersluice (Structural Concrete) | 2025-07-20 → none | 2025-09-02 → none | 45d → 0d | 992d → none |
| IFC-2104 | Issuance of IFC for Intake & Gravel Trap (Excavation & Foundation) | 2025-03-22 → none | 2025-04-05 → none | 15d → 0d | 539d → none |
| IFC-2105 | Issuance of IFC for Intake & Gravel Trap (Structural Concrete) | 2025-07-05 → none | 2025-08-03 → none | 30d → 0d | 539d → none |
| IFC-2106 | Issuance of IFC for Left Bank Flood Walls (All Sections) | 2025-03-22 → none | 2025-04-20 → none | 30d → 0d | 1169d → none |
| IFC-2107 | Issuance of IFC for Approach Culvert & Settling Basin (Excavation & Foundation) | 2025-08-04 → none | 2025-08-18 → none | 15d → 0d | 539d → none |
| IFC-2108 | Issuance of IFC for Approach Culvert & Settling Basin (Structural Concrete) | 2026-01-16 → none | 2026-02-04 → none | 20d → 0d | 539d → none |
| IFC-2109 | Issuance of IFC for Energy Dissipator | 2026-04-06 → none | 2026-05-20 → none | 45d → 0d | 539d → none |
| IFC-2110 | Issuance of IFC for Headpond & CFRD (Excavation & Embankment) | 2026-05-21 → none | 2026-06-09 → none | 20d → 0d | 539d → none |
| IFC-2111 | Issuance of IFC for Headpond Lining & Bypass Pipe | 2026-11-07 → none | 2026-12-06 → none | 30d → 0d | 539d → none |
| IFC-LOT2III | **IFC Drawings - Penstock & Surge (LOT 2-III)** | 2025-01-01 → none | 2026-03-26 → none |  |  |
| IFC-2201 | Issuance of IFC for Surge Shaft (Excavation & Support) | 2025-01-01 → none | 2025-01-30 → none | 30d → 0d | 832d → none |
| IFC-2202 | Issuance of IFC for Surge Shaft (Concrete Lining) | 2025-09-28 → none | 2025-10-27 → none | 30d → 0d | 944d → none |
| IFC-2211 | Issuance of IFC for Vertical Pressure Shaft (Excavation & Support) | 2025-01-31 → none | 2025-03-16 → none | 45d → 0d | 832d → none |
| IFC-2212 | Issuance of IFC for Vertical Pressure Shaft (Steel Liner & Concrete) | 2026-01-11 → none | 2026-02-09 → none | 30d → 0d | 832d → none |
| IFC-2221 | Issuance of IFC for Horizontal Penstock Shaft (Excavation & Support) | 2025-12-27 → none | 2026-01-25 → none | 30d → 0d | 800d → none |
| IFC-2222 | Issuance of IFC for Horizontal Penstock Shaft (Steel Liner & Concrete) | 2026-03-12 → none | 2026-03-26 → none | 15d → 0d | 800d → none |
| IFC-LOT2IV | **IFC Drawings - Powerhouse & Auxiliary (LOT 2-IV)** | 2025-04-01 → none | 2026-09-12 → none |  |  |
| IFC-3101 | Issuance of IFC for Ventilation Tunnel (Excavation & Support) | 2025-04-01 → none | 2025-04-30 → none | 30d → 0d | 630d → none |
| IFC-3201 | Issuance of IFC for Powerhouse Cavern (Excavation & Primary Support) | 2025-05-31 → none | 2025-06-29 → none | 30d → 0d | 630d → none |
| IFC-3202 | Issuance of IFC for Powerhouse Cavern (Crane Beam & Arch Concrete) | 2025-10-28 → none | 2025-12-06 → none | 40d → 0d | 777d → none |
| IFC-3203 | Issuance of IFC for Powerhouse Cavern (Substructure & Draft Tube Concrete) | 2026-03-07 → none | 2026-04-05 → none | 30d → 0d | 777d → none |
| IFC-3301 | Issuance of IFC for Transformer Cavern (Excavation & Primary Support) | 2025-06-30 → none | 2025-08-08 → none | 40d → 0d | 630d → none |
| IFC-3302 | Issuance of IFC for Transformer Cavern (Structural Concrete) | 2026-01-06 → none | 2026-02-19 → none | 45d → 0d | 630d → none |
| IFC-3401 | Issuance of IFC for Cable Tunnel (Excavation & Lining) | 2026-02-20 → none | 2026-03-21 → none | 30d → 0d | 630d → none |
| IFC-3501 | Issuance of IFC for Access Tunnel to Penstock (Excavation & Support) | 2025-05-01 → none | 2025-05-30 → none | 30d → 0d | 800d → none |
| IFC-3601 | Issuance of IFC for Drainage Gallery (Excavation & Lining) | 2026-04-21 → none | 2026-05-15 → none | 25d → 0d | 630d → none |
| IFC-3701 | Issuance of IFC for Escape Tunnel (Excavation & Lining) | 2026-08-14 → none | 2026-09-12 → none | 30d → 0d | 630d → none |
| IFC-LOT2V | **IFC Drawings - Access & Tailrace Tunnels (LOT 2-V)** | 2025-01-01 → none | 2025-12-16 → none |  |  |
| IFC-4201 | Issuance of IFC for Tailrace Tunnel (Portal & Excavation Support) | 2025-01-01 → none | 2025-01-30 → none | 30d → 0d | 954d → none |
| IFC-4202 | Issuance of IFC for Tailrace Tunnel (Concrete Lining & Outlet Works) | 2025-09-28 → none | 2025-10-17 → none | 20d → 0d | 954d → none |
| IFC-4211 | Issuance of IFC for Main Access Tunnel (Portal & Excavation Support) | 2025-01-01 → none | 2025-01-30 → none | 30d → 0d | 630d → none |
| IFC-4212 | Issuance of IFC for Main Access Tunnel (Final Lining & Pavement) | 2025-11-27 → none | 2025-12-16 → none | 20d → 0d | 894d → none |
| IFC-LOT3 | **IFC Drawings - Hydromechanical Works** | 2025-01-01 → none | 2025-11-26 → none |  |  |
| IFC-5101 | Approval of HM Design for Intake & Undersluice Gates | 2025-01-01 → none | 2025-03-01 → none | 60d → 0d | 907d → none |
| IFC-5102 | Approval of HM Design for Settling Basin & Headpond Gates | 2025-05-31 → none | 2025-07-29 → none | 60d → 0d | 907d → none |
| IFC-5201 | Approval of HM Design for Penstock Pipes & Manifolds | 2025-09-28 → none | 2025-11-26 → none | 60d → 0d | 907d → none |
| IFC-LOT4 | **IFC Drawings - Electromechanical Works** | 2025-01-01 → none | 2025-09-27 → none |  |  |
| IFC-6001 | Approval of EM Design for Turbine & Generator | 2025-03-17 → none | 2025-04-30 → none | 45d → 0d | 967d → none |
| IFC-6002 | Approval of EM Design for Powerhouse Cranes | 2025-01-01 → none | 2025-02-14 → none | 45d → 0d | 967d → none |
| IFC-6003 | Approval of EM Design for Transformers & Switchgear | 2025-05-31 → none | 2025-07-29 → none | 60d → 0d | 967d → none |
| IFC-6004 | Approval of EM Design for Balance of Plant (BOP) | 2025-08-29 → none | 2025-09-27 → none | 30d → 0d | 967d → none |
| IFC-LOT5 | **IFC Drawings - Transmission Line (LOT 5)** | 2025-01-01 → none | 2025-08-28 → none |  |  |
| IFC-2501 | Issuance of IFC for Transmission Line (Foundations & Access) | 2025-01-01 → none | 2025-03-01 → none | 60d → 0d | 1010d → none |
| IFC-2502 | Issuance of IFC for Transmission Line (Tower & Stringing Details) | 2025-05-31 → none | 2025-08-28 → none | 90d → 0d | 1010d → none |

## Version 3 (data date 2025-01-01, saved 2025-06-22)

Note of the change: backup of the database

Last finish stays 2028-09-15.

Added:

| ID | Task | Duration | Start | Finish | Predecessors | Constraint |
| --- | --- | --- | --- | --- | --- | --- |
| III | **Project Management and Monitoring** |  | 2025-01-01 | 2028-02-20 |  |  |
| PMC-PH1 | **Phase I: Pre-Construction Phase** |  | 2025-01-01 | 2026-02-03 |  |  |
| PMC-1-1 | **Project Inception and Planning** |  | 2025-06-01 | 2025-08-31 |  |  |
| PMC-1000 | Start of PMC Services (Contract Signature) | 0d | 2025-06-01 | 2025-06-01 |  | start on or after 2025-06-01 |
| PMC-1010 | Project Inception Kick-off Meeting with Client | 2d | 2025-06-01 | 2025-06-02 | PMC-1000 |  |
| PMC-1110 | Critical Review of DPR, Feasibility, ESIA & Geotechnical Reports | 60d | 2025-06-03 | 2025-08-01 | PMC-1010 |  |
| PMC-1120 | Develop Integrated Project Management Plan (PMP) | 90d | 2025-06-03 | 2025-08-31 | PMC-1110 SS |  |
| PMC-1121 | Develop Project Execution & Communication Plan | 45d | 2025-06-03 | 2025-07-17 | PMC-1110 SS |  |
| PMC-1122 | Develop Quality Management Plan (QMP) | 60d | 2025-06-03 | 2025-08-01 | PMC-1110 SS |  |
| PMC-1123 | Develop Health, Safety & Environment (HSE) Plan | 60d | 2025-06-03 | 2025-08-01 | PMC-1110 SS |  |
| PMC-1124 | Develop Risk Management Plan & Risk Register | 60d | 2025-06-03 | 2025-08-01 | PMC-1110 SS |  |
| PMC-1125 | Develop Change & Contract Management Plan | 45d | 2025-06-03 | 2025-07-17 | PMC-1110 SS |  |
| PMC-1-2 | **Detailed Engineering Design Review & Value Engineering** |  | 2025-01-01 | 2025-09-27 |  |  |
| PMC-1210 | Review & Approve EPC's Detailed Engineering Designs & Drawings | 270d | 2025-01-01 | 2025-09-27 |  |  |
| PMC-1220 | Conduct Value Engineering Workshops and Studies | 30d | 2025-03-02 | 2025-03-31 | PMC-1210 SS+60d |  |
| PMC-1-3 | **Tendering and Contract Award Assistance** |  | 2025-09-01 | 2026-02-03 |  |  |
| PMC-1310 | Assist Client in Preparation of any remaining Tender Documents | 60d | 2025-09-01 | 2025-10-30 | PMC-1120 |  |
| PMC-1320 | Manage Bid Process (Pre-qualification, Conferences, Clarifications) | 45d | 2025-10-31 | 2025-12-14 | PMC-1310 |  |
| PMC-1330 | Lead Technical & Financial Bid Evaluation | 30d | 2025-12-15 | 2026-01-13 | PMC-1320 |  |
| PMC-1340 | Support Client in Contract Negotiations & Finalization | 21d | 2026-01-14 | 2026-02-03 | PMC-1330 |  |
| PMC-PH2 | **Phase II: Construction, Supervision, and Commissioning Phase** |  | 2025-01-01 | 2028-02-20 |  |  |
| PMC-2-1 | **Construction Supervision and Management** |  | 2025-06-01 | 2028-02-20 |  |  |
| PMC-2100 | Act as 'the Engineer' - Contract Administration (LOE) | 980d | 2025-06-01 | 2028-02-05 | PMC-PH2-START |  |
| PMC-2110 | Review & Approve Contractor's Site Mobilization Plan | 21d | 2025-06-01 | 2025-06-21 | PMC-PH2-START |  |
| PMC-2140 | Check & Verify Contractor's Survey and Setting Out (LOE) | 980d | 2025-06-01 | 2028-02-05 | PMC-PH2-START |  |
| PMC-PH2-START | Commencement of Construction Supervision Phase | 0d | 2025-06-01 | 2025-06-01 | PMC-1000 |  |
| PMC-2120 | Review & Approve Construction Schedules (Primavera P6) | 30d | 2025-06-16 | 2025-07-15 | PMC-PH2-START FS+15d |  |
| PMC-2130 | Monitor Progress vs Baseline & Issue Monthly Reports (LOE) | 980d | 2025-06-16 | 2028-02-20 | PMC-2120 SS |  |
| PMC-2-2 | **Quality Assurance and Quality Control (QA/QC)** |  | 2025-01-01 | 2028-02-05 |  |  |
| PMC-2260 | Supervise Factory Acceptance Tests (FAT) for HM/EM Equipment | 365d | 2025-01-01 | 2025-12-31 |  |  |
| PMC-2210 | Enforce Quality Management Plan (QMP) (LOE) | 980d | 2025-06-01 | 2028-02-05 | PMC-PH2-START |  |
| PMC-2220 | Review & Approve Contractor's QA/QC Plans and ITPs | 30d | 2025-06-01 | 2025-06-30 | PMC-PH2-START |  |
| PMC-2240 | Inspect & Approve Materials/Equipment at Site (LOE) | 980d | 2025-06-01 | 2028-02-05 | PMC-PH2-START |  |
| PMC-2250 | Supervise & Witness On-site Laboratory and Field Tests (LOE) | 980d | 2025-06-01 | 2028-02-05 | PMC-PH2-START |  |
| PMC-2270 | Manage Non-Conformance Reports (NCRs) (LOE) | 980d | 2025-06-01 | 2028-02-05 | PMC-PH2-START |  |
| PMC-2230 | Approve Concrete and Shotcrete Mix Designs | 45d | 2025-10-25 | 2025-12-08 | MS-2I-2103-A SS |  |
| PMC-2-3 | **Contract, Cost, and Claims Management** |  | 2025-06-01 | 2028-02-05 |  |  |
| PMC-2310 | Review & Certify Contractor's Interim Payment Certificates (IPCs) | 980d | 2025-06-01 | 2028-02-05 | PMC-PH2-START |  |
| PMC-2320 | Maintain Cost Control System & Forecast EAC (LOE) | 980d | 2025-06-01 | 2028-02-05 | PMC-2310 SS |  |
| PMC-2330 | Manage Variation and Change Control Process (LOE) | 980d | 2025-06-01 | 2028-02-05 | PMC-2310 SS |  |
| PMC-2340 | Assess Contractor Claims (EOT & Cost) and provide recommendations (LOE) | 980d | 2025-06-01 | 2028-02-05 | PMC-2310 SS |  |
| PMC-2-4 | **HSE and Social Management** |  | 2025-06-01 | 2028-02-05 |  |  |
| PMC-2410 | Supervise Contractor's Adherence to HSE Plan (LOE) | 980d | 2025-06-01 | 2028-02-05 | PMC-PH2-START |  |
| PMC-2420 | Conduct Regular Safety Audits & Promote Safety Culture (LOE) | 980d | 2025-06-01 | 2028-02-05 | PMC-2410 SS |  |
| PMC-2430 | Investigate and Report all HSE Incidents (LOE) | 980d | 2025-06-01 | 2028-02-05 | PMC-2410 SS |  |
| PMC-2440 | Monitor Implementation of ESMP and RAP (LOE) | 980d | 2025-06-01 | 2028-02-05 | PMC-2410 SS |  |
| PMC-2450 | Manage Grievance Redressal Mechanism (GRM) & Stakeholder Liaison (LOE) | 980d | 2025-06-01 | 2028-02-05 | PMC-2440 SS |  |
| PMC-2-5 | **Testing, Commissioning, and Handover** |  | 2025-01-01 | 2025-03-02 |  |  |
| PMC-2510 | Review & Approve Commissioning Plans and Protocols | 45d | 2025-01-01 | 2025-02-14 |  |  |
| PMC-2520 | Supervise Pre-commissioning and Commissioning Activities | 61d | 2025-01-01 | 2025-03-02 |  |  |
| PMC-2530 | Supervise and Certify Performance Guarantee (PG) Tests | 21d | 2025-01-01 | 2025-01-21 |  |  |
| PMC-2540 | Prepare Punch List and Issue Taking-Over Certificate | 14d | 2025-01-01 | 2025-01-14 |  |  |
| PMC-PH3 | **Phase III: Post-Construction Phase** |  | 2025-01-15 | 2027-01-09 |  |  |
| PMC-3-1 | **Defects Liability Period (DLP) Management** |  | 2025-01-15 | 2026-01-14 |  |  |
| PMC-3110 | Periodic Inspections during Defects Liability Period (LOE) | 365d | 2025-01-15 | 2026-01-14 | PMC-PH3-START |  |
| PMC-3120 | Notify & Supervise Rectification of Defects (LOE) | 365d | 2025-01-15 | 2026-01-14 | PMC-3110 SS |  |
| PMC-PH3-START | Commencement of Defects Liability Period | 0d | 2025-01-15 | 2025-01-15 | PMC-2540 |  |
| PMC-3-2 | **Project Close-out and Final Documentation** |  | 2026-01-15 | 2027-01-09 |  |  |
| PMC-3240 | Final Inspection at end of DLP | 14d | 2026-01-15 | 2026-01-28 | PMC-3110 |  |
| PMC-3250 | Issue Performance / Final Acceptance Certificate | 0d | 2026-01-29 | 2026-01-29 | PMC-3240 |  |
| PMC-3260 | Assist Client in Final Account Settlement | 45d | 2026-01-29 | 2026-03-14 | PMC-3250 |  |
| PMC-3270 | Prepare and Submit Project Completion Report (PCR) | 60d | 2026-01-29 | 2026-03-29 | PMC-3260 SS |  |
| PMC-3280 | Final Archiving and Handover of all Project Documents | 21d | 2026-03-30 | 2026-04-19 | PMC-3270 |  |
| PMC-3210 | Review and Approve "As-Built" Documentation | 90d | 2026-09-12 | 2026-12-10 | PMC-3110 FS+240d |  |
| PMC-3220 | Review and Approve O&M Manuals | 90d | 2026-09-12 | 2026-12-10 | PMC-3110 FS+240d |  |
| PMC-3230 | Supervise and Certify O&M Personnel Training | 30d | 2026-12-11 | 2027-01-09 | PMC-3220 |  |
| IV | **IFC and MS** |  | 2025-01-01 | 2026-03-20 |  |  |
| MS | **Method Statements** |  | 2025-02-15 | 2026-03-20 |  |  |
| MS-LOT2I | **Method Statements - Headworks (LOT 2-I)** |  | 2025-06-21 | 2025-11-14 |  |  |
| MS-2I-2101-S | Submission of MS for Cofferdam & River Diversion | 21d | 2025-06-21 | 2025-07-11 | IFC-2101 |  |
| MS-2I-2104-S | Submission of MS for Intake & Gravel Trap Foundations | 21d | 2025-06-26 | 2025-07-16 | IFC-2104 |  |
| MS-2I-2110-S | Submission of MS for Headpond & CFRD Embankment | 21d | 2025-07-11 | 2025-07-31 | IFC-2110 |  |
| MS-2I-2101-A | Approval of MS for Cofferdam & River Diversion | 14d | 2025-07-12 | 2025-07-25 | MS-2I-2101-S |  |
| MS-2I-2104-A | Approval of MS for Intake & Gravel Trap Foundations | 14d | 2025-07-17 | 2025-07-30 | MS-2I-2104-S |  |
| MS-2I-2105-S | Submission of MS for Intake & Gravel Trap Concrete | 21d | 2025-07-26 | 2025-08-15 | IFC-2105 |  |
| MS-2I-2110-A | Approval of MS for Headpond & CFRD Embankment | 21d | 2025-08-01 | 2025-08-21 | MS-2I-2110-S |  |
| MS-2I-2107-S | Submission of MS for Settling Basin Excavation & Foundations | 21d | 2025-08-10 | 2025-08-30 | IFC-2107 |  |
| MS-2I-2105-A | Approval of MS for Intake & Gravel Trap Concrete | 21d | 2025-08-16 | 2025-09-05 | MS-2I-2105-S |  |
| MS-2I-2102-S | Submission of MS for Barrage & Undersluice Foundations | 21d | 2025-08-20 | 2025-09-09 | IFC-2102 |  |
| MS-2I-2107-A | Approval of MS for Settling Basin Excavation & Foundations | 14d | 2025-08-31 | 2025-09-13 | MS-2I-2107-S |  |
| MS-2I-2108-S | Submission of MS for Settling Basin Structural Concrete | 21d | 2025-09-09 | 2025-09-29 | IFC-2108 |  |
| MS-2I-2111-S | Submission of MS for Headpond Lining & Bypass Pipe | 21d | 2025-09-09 | 2025-09-29 | IFC-2111 |  |
| MS-2I-2102-A | Approval of MS for Barrage & Undersluice Foundations | 14d | 2025-09-10 | 2025-09-23 | MS-2I-2102-S |  |
| MS-2I-2108-A | Approval of MS for Settling Basin Structural Concrete | 21d | 2025-09-30 | 2025-10-20 | MS-2I-2108-S |  |
| MS-2I-2111-A | Approval of MS for Headpond Lining & Bypass Pipe | 14d | 2025-09-30 | 2025-10-13 | MS-2I-2111-S |  |
| MS-2I-2103-S | Submission of MS for Barrage & Undersluice Concrete | 21d | 2025-10-04 | 2025-10-24 | IFC-2103 |  |
| MS-2I-2103-A | Approval of MS for Barrage & Undersluice Concrete | 21d | 2025-10-25 | 2025-11-14 | MS-2I-2103-S |  |
| MS-LOT2III | **Method Statements - Penstock & Surge (LOT 2-III)** |  | 2025-05-30 | 2025-12-25 |  |  |
| MS-2III-2221-S | Submission of MS for Horizontal Penstock Excavation | 15d | 2025-05-30 | 2025-06-13 | IFC-2221 |  |
| MS-2III-2221-A | Approval of MS for Horizontal Penstock Excavation | 14d | 2025-06-14 | 2025-06-27 | MS-2III-2221-S |  |
| MS-2III-2222-S | Submission of MS for HPS Steel Liner & Concrete | 15d | 2025-06-14 | 2025-06-28 | IFC-2222 |  |
| MS-2III-2222-A | Approval of MS for HPS Steel Liner & Concrete | 14d | 2025-06-29 | 2025-07-12 | MS-2III-2222-S |  |
| MS-2III-2201-S | Submission of MS for Surge Shaft Excavation | 21d | 2025-08-31 | 2025-09-20 | IFC-2201 |  |
| MS-2III-2201-A | Approval of MS for Surge Shaft Excavation | 14d | 2025-09-21 | 2025-10-04 | MS-2III-2201-S |  |
| MS-2III-2202-S | Submission of MS for Surge Shaft Lining | 21d | 2025-09-30 | 2025-10-20 | IFC-2202 |  |
| MS-2III-2211-S | Submission of MS for Vertical Pressure Shaft Excavation | 21d | 2025-10-15 | 2025-11-04 | IFC-2211 |  |
| MS-2III-2202-A | Approval of MS for Surge Shaft Lining | 14d | 2025-10-21 | 2025-11-03 | MS-2III-2202-S |  |
| MS-2III-2211-A | Approval of MS for Vertical Pressure Shaft Excavation | 14d | 2025-11-05 | 2025-11-18 | MS-2III-2211-S |  |
| MS-2III-2212-S | Submission of MS for VPS Steel Liner & Concrete | 21d | 2025-11-14 | 2025-12-04 | IFC-2212 |  |
| MS-2III-2212-A | Approval of MS for VPS Steel Liner & Concrete | 21d | 2025-12-05 | 2025-12-25 | MS-2III-2212-S |  |
| MS-LOT2IV | **Method Statements - Powerhouse & Auxiliary (LOT 2-IV)** |  | 2025-04-30 | 2025-11-14 |  |  |
| MS-2IV-3101-S | Submission of MS for Ventilation Tunnel | 15d | 2025-04-30 | 2025-05-14 | IFC-3101 |  |
| MS-2IV-3501-S | Submission of MS for Access Tunnel to Penstock | 21d | 2025-04-30 | 2025-05-20 | IFC-3501 |  |
| MS-2IV-3101-A | Approval of MS for Ventilation Tunnel | 14d | 2025-05-15 | 2025-05-28 | MS-2IV-3101-S |  |
| MS-2IV-3501-A | Approval of MS for Access Tunnel to Penstock | 14d | 2025-05-21 | 2025-06-03 | MS-2IV-3501-S |  |
| MS-2IV-3201-S | Submission of MS for Powerhouse Cavern Excavation | 21d | 2025-05-30 | 2025-06-19 | IFC-3201 |  |
| MS-2IV-3301-S | Submission of MS for Transformer Cavern Excavation | 21d | 2025-06-09 | 2025-06-29 | IFC-3301 |  |
| MS-2IV-3201-A | Approval of MS for Powerhouse Cavern Excavation | 14d | 2025-06-20 | 2025-07-03 | MS-2IV-3201-S |  |
| MS-2IV-3301-A | Approval of MS for Transformer Cavern Excavation | 14d | 2025-06-30 | 2025-07-13 | MS-2IV-3301-S |  |
| MS-2IV-3202-S | Submission of MS for PHC Crane Beam & Arch Concrete | 21d | 2025-07-09 | 2025-07-29 | IFC-3202 |  |
| MS-2IV-3302-S | Submission of MS for TC Structural Concrete | 21d | 2025-07-24 | 2025-08-13 | IFC-3302 |  |
| MS-2IV-3202-A | Approval of MS for PHC Crane Beam & Arch Concrete | 14d | 2025-07-30 | 2025-08-12 | MS-2IV-3202-S |  |
| MS-2IV-3203-S | Submission of MS for PHC Substructure & Draft Tube Concrete | 21d | 2025-08-08 | 2025-08-28 | IFC-3203 |  |
| MS-2IV-3302-A | Approval of MS for TC Structural Concrete | 14d | 2025-08-14 | 2025-08-27 | MS-2IV-3302-S |  |
| MS-2IV-3401-S | Submission of MS for Cable Tunnel | 15d | 2025-08-23 | 2025-09-06 | IFC-3401 |  |
| MS-2IV-3203-A | Approval of MS for PHC Substructure & Draft Tube Concrete | 21d | 2025-08-29 | 2025-09-18 | MS-2IV-3203-S |  |
| MS-2IV-3401-A | Approval of MS for Cable Tunnel | 14d | 2025-09-07 | 2025-09-20 | MS-2IV-3401-S |  |
| MS-2IV-3601-S | Submission of MS for Drainage Gallery | 15d | 2025-09-17 | 2025-10-01 | IFC-3601 |  |
| MS-2IV-3601-A | Approval of MS for Drainage Gallery | 14d | 2025-10-02 | 2025-10-15 | MS-2IV-3601-S |  |
| MS-2IV-3701-S | Submission of MS for Escape Tunnel | 15d | 2025-10-17 | 2025-10-31 | IFC-3701 |  |
| MS-2IV-3701-A | Approval of MS for Escape Tunnel | 14d | 2025-11-01 | 2025-11-14 | MS-2IV-3701-S |  |
| MS-LOT2V | **Method Statements - Access & Tailrace Tunnels (LOT 2-V)** |  | 2025-03-31 | 2026-03-20 |  |  |
| MS-2V-4201-S | Submission of MS for Tailrace Tunnel (Portal & Excavation) | 21d | 2025-03-31 | 2025-04-20 | IFC-4201 |  |
| MS-2V-4211-S | Submission of MS for Main Access Tunnel (Portal & Excavation) | 21d | 2025-03-31 | 2025-04-20 | IFC-4211 |  |
| MS-2V-4202-S | Submission of MS for Tailrace Tunnel (Lining & Outlet) | 21d | 2025-04-20 | 2025-05-10 | IFC-4202 |  |
| MS-2V-4201-A | Approval of MS for Tailrace Tunnel (Portal & Excavation) | 14d | 2025-04-21 | 2025-05-04 | MS-2V-4201-S |  |
| MS-2V-4211-A | Approval of MS for Main Access Tunnel (Portal & Excavation) | 14d | 2025-04-21 | 2025-05-04 | MS-2V-4211-S |  |
| MS-2V-4202-A | Approval of MS for Tailrace Tunnel (Lining & Outlet) | 14d | 2025-05-11 | 2025-05-24 | MS-2V-4202-S |  |
| MS-2V-4212-S | Submission of MS for Main Access Tunnel (Lining & Pavement) | 21d | 2026-02-14 | 2026-03-06 | IFC-4212 |  |
| MS-2V-4212-A | Approval of MS for Main Access Tunnel (Lining & Pavement) | 14d | 2026-03-07 | 2026-03-20 | MS-2V-4212-S |  |
| MS-LOT3 | **Method Statements - Hydromechanical Works** |  | 2025-03-02 | 2026-01-07 |  |  |
| MS-3-5101-S | Submission of MS for Fabrication & Installation of Intake & Undersluice Gates | 21d | 2025-03-02 | 2025-03-22 | IFC-5101 |  |
| MS-3-5101-A | Approval of MS for Fabrication & Installation of Intake & Undersluice Gates | 21d | 2025-03-23 | 2025-04-12 | MS-3-5101-S |  |
| MS-3-5102-S | Submission of MS for Fabrication & Installation of Waterway Gates | 21d | 2025-07-30 | 2025-08-19 | IFC-5102 |  |
| MS-3-5102-A | Approval of MS for Fabrication & Installation of Waterway Gates | 21d | 2025-08-20 | 2025-09-09 | MS-3-5102-S |  |
| MS-3-5201-S | Submission of MS for Fabrication & Installation of Penstock | 21d | 2025-11-27 | 2025-12-17 | IFC-5201 |  |
| MS-3-5201-A | Approval of MS for Fabrication & Installation of Penstock | 21d | 2025-12-18 | 2026-01-07 | MS-3-5201-S |  |
| MS-LOT4 | **Method Statements - Electromechanical Works** |  | 2025-02-15 | 2025-11-08 |  |  |
| MS-4-6002-S | Submission of MS for Installation of Powerhouse Cranes | 15d | 2025-02-15 | 2025-03-01 | IFC-6002 |  |
| MS-4-6002-A | Approval of MS for Installation of Powerhouse Cranes | 14d | 2025-03-02 | 2025-03-15 | MS-4-6002-S |  |
| MS-4-6001-S | Submission of MS for Installation of Turbine & Generator | 21d | 2025-05-01 | 2025-05-21 | IFC-6001 |  |
| MS-4-6001-A | Approval of MS for Installation of Turbine & Generator | 21d | 2025-05-22 | 2025-06-11 | MS-4-6001-S |  |
| MS-4-6003-S | Submission of MS for Installation of Transformers & Switchgear | 21d | 2025-07-30 | 2025-08-19 | IFC-6003 |  |
| MS-4-6003-A | Approval of MS for Installation of Transformers & Switchgear | 21d | 2025-08-20 | 2025-09-09 | MS-4-6003-S |  |
| MS-4-6004-S | Submission of MS for Installation of Balance of Plant (BOP) | 21d | 2025-09-28 | 2025-10-18 | IFC-6004 |  |
| MS-4-6004-A | Approval of MS for Installation of Balance of Plant (BOP) | 21d | 2025-10-19 | 2025-11-08 | MS-4-6004-S |  |
| MS-LOT5 | **Method Statements - Transmission Line (LOT 5)** |  | 2025-03-02 | 2025-09-26 |  |  |
| MS-5-2501-S | Submission of MS for TL Foundations & Access | 15d | 2025-03-02 | 2025-03-16 | IFC-2501 |  |
| MS-5-2501-A | Approval of MS for TL Foundations & Access | 14d | 2025-03-17 | 2025-03-30 | MS-5-2501-S |  |
| MS-5-2502-S | Submission of MS for TL Tower Erection & Stringing | 15d | 2025-08-29 | 2025-09-12 | IFC-2502 |  |
| MS-5-2502-A | Approval of MS for TL Tower Erection & Stringing | 14d | 2025-09-13 | 2025-09-26 | MS-5-2502-S |  |
| 1 | **Construction of Headworks (LOT 2-I)** |  | 2025-01-01 | 2028-03-24 |  |  |
| 1 | **First Phase Construction** |  | 2025-01-01 | 2028-03-24 |  |  |
| 1 | **Cofferdam & River Diversion Works Stage 1** |  | 2025-01-01 | 2025-11-01 |  |  |
| 2 | **Construction of U/S Raft** |  |  |  |  |  |
| 3 | **Construction of U/S Left Bank Flood Wall** |  |  |  |  |  |
| 9 | **Construction of DS Cutoff** |  |  |  |  |  |
| 2 | **Second Phase Construciton** |  | 2025-12-31 | 2027-09-16 |  |  |
| 1 | **Cofferdam & River Diversion Works Stage 2** |  |  |  |  |  |
| 3 | **Construction of U/S Right Bank Flood Wall** |  |  |  |  |  |
| 4 | **Weir** |  |  |  |  |  |
| 2 | **Construction of U/S Raft** |  |  |  |  |  |
| 5 | **Stilling Basin Blocks** |  |  |  |  |  |
| 6 | **DS Right Bank Flood Wall** |  | 2025-12-31 | 2027-09-16 |  |  |
| 8 | **Construction of DS Cutoff** |  |  |  |  |  |
| A-2000 | Site Clearance and Excavation Arrangements | 30d | 2025-11-01 | 2025-11-30 | KD-11 SS |  |
| A-2020 | Construction of Connecting Tunnel | 50d | 2026-11-16 | 2027-01-04 | A-2010 |  |
| A-2300 | Site Clearance and Preparation | 30d | 2025-11-01 | 2025-11-30 | KD-12 SS |  |
| A-2310 | Installation of Shaft Boring Machine | 60d | 2025-12-01 | 2026-01-29 | A-2300 |  |
| A-2320 | Excavation of Pressure Shaft | 710d | 2026-01-30 | 2028-01-09 | A-2310 |  |
| A-1550 | Excavation of Branching Tunnel | 30d | 2026-02-24 | 2026-03-25 | A-1240 |  |
| A-1560 | Excavation of Penstock Tunnels | 45d | 2026-03-04 | 2026-04-17 | A-1550 SS+8d |  |
| A-1610 | Ventillation Tunnel Excavation (Portal to V2) | 90d | 2025-08-13 | 2025-11-10 | A-1260 SS |  |
| A-1590 | Ventillation Tunnel Excavation (V1 to TC) | 20d | 2025-09-27 | 2025-10-16 | A-1260 |  |
| A-1600 | Ventillation Tunnel Excavation (V2 to PC) | 20d | 2025-11-11 | 2025-11-30 | A-1270 |  |
| A-2510 | Main Access Tunnel Portal Construction | 60d | 2025-02-14 | 2025-04-14 | KD-21 SS |  |
| A-2520 | Excavation of MAT (Portal - N1) | 430d | 2025-04-15 | 2026-06-18 | A-2510 |  |
| A-2530 | Excavation of MAT (N1 - N2) | 60d | 2026-06-19 | 2026-08-17 | A-2520 |  |
| A-2540 | Excavation of MAT (N2 - HPS) | 430d | 2026-08-18 | 2027-10-21 | A-2530 |  |
| A-2610 | TRC Tunnel Portal Construction | 45d | 2025-02-14 | 2025-03-30 | KD-22 SS |  |
| A-2620 | TRC Tunnel Excavation | 589d | 2025-03-31 | 2026-11-09 | A-2610 |  |
| A-2630 | TRC Branch Tunnel Excavation | 90d | 2026-11-10 | 2027-02-07 | A-2620 |  |
| 1 | **Engineering, Procurement & Delivery** |  | 2026-07-21 | 2027-08-24 |  |  |
| HM-1010 | Detailed Design, Shop Drawing Approval & Procurement | 100d | 2026-07-21 | 2026-10-28 | KD-23 SS |  |
| HM-1020 | Manufacturing, Factory Acceptance Testing (FAT), and Phased Delivery | 300d | 2026-10-29 | 2027-08-24 | HM-1010 |  |
| 2 | **Penstock Pipe Installation** |  | 2026-10-29 | 2027-04-06 |  |  |
| HM-2010 | Penstock Pipe Installation, Welding, NDT, and Hydro-testing | 160d | 2026-10-29 | 2027-04-06 | HM-1010 |  |
| 3 | **Gates & Hoists Installation** |  | 2026-10-29 | 2028-01-21 |  |  |
| HM-3010 | Undersluice Gates: Installation of Embedded Parts (Guides, Sills) | 150d | 2026-10-29 | 2027-03-27 | HM-1010 |  |
| HM-3030 | Intake Gates: Installation of Embedded Parts | 150d | 2026-10-29 | 2027-03-27 | HM-1010 |  |
| HM-3020 | Undersluice Gates: Assembly & Installation of Gate Leaves & Hoists | 120d | 2027-03-28 | 2027-07-25 | HM-3010 |  |
| HM-3040 | Intake Gates: Assembly & Installation of Emergency and Maintenance Gates | 120d | 2027-03-28 | 2027-07-25 | HM-3030 |  |
| HM-3050 | Powerhouse Draft Tube Gates: Assembly & Installation | 150d | 2027-08-25 | 2028-01-21 | HM-1020 |  |
| 4 | **Final Works and Commissioning** |  | 2028-01-22 | 2028-03-24 |  |  |
| HM-4010 | Integrated Dry & Wet Commissioning of All Gates and Systems | 63d | 2028-01-22 | 2028-03-24 | HM-3020, HM-3040, HM-3050 |  |
| 1 | **Project Management & Procurement** |  | 2026-12-04 | 2028-03-02 |  |  |
| EM-6101 | E/M Detailed Design, Shop Drawing Submission & Approval | 90d | 2026-12-04 | 2027-03-03 | KD-25 SS |  |
| EM-6102 | Manufacturing, FAT, and Shipment of E/M Components to Site | 365d | 2027-03-04 | 2028-03-02 | EM-6101 |  |
| 2 | **Powerhouse Mechanical Systems** |  | 2026-12-04 | 2028-02-26 |  |  |
| 1 | **Main Generating Units - Mechanical** |  | 2027-02-02 | 2028-02-26 |  |  |
| EM-6211 | Unit 1: Install Draft Tube Liner, Stay Ring, and Spiral Casing | 90d | 2027-02-02 | 2027-05-02 | EM-6221 |  |
| EM-6213 | Unit 2: Install Draft Tube Liner, Stay Ring, and Spiral Casing | 90d | 2027-04-03 | 2027-07-01 | EM-6211 SS+60d |  |
| EM-6212 | Unit 1: Assemble Turbine Runner, Shaft, and Head Cover | 60d | 2027-05-03 | 2027-07-01 | EM-6211 |  |
| EM-6215 | Unit 3: Install Draft Tube Liner, Stay Ring, and Spiral Casing | 90d | 2027-06-02 | 2027-08-30 | EM-6213 SS+60d |  |
| EM-6214 | Unit 2: Assemble Turbine Runner, Shaft, and Head Cover | 60d | 2027-07-02 | 2027-08-30 | EM-6213 |  |
| EM-6217 | Unit 4: Install Draft Tube Liner, Stay Ring, and Spiral Casing | 90d | 2027-08-01 | 2027-10-29 | EM-6215 SS+60d |  |
| EM-6216 | Unit 3: Assemble Turbine Runner, Shaft, and Head Cover | 60d | 2027-08-31 | 2027-10-29 | EM-6215 |  |
| EM-6219 | Unit 5: Install Draft Tube Liner, Stay Ring, and Spiral Casing | 90d | 2027-09-30 | 2027-12-28 | EM-6217 SS+60d |  |
| EM-6218 | Unit 4: Assemble Turbine Runner, Shaft, and Head Cover | 60d | 2027-10-30 | 2027-12-28 | EM-6217 |  |
| EM-6220 | Unit 5: Assemble Turbine Runner, Shaft, and Head Cover | 60d | 2027-12-29 | 2028-02-26 | EM-6219 |  |
| 2 | **Balance of Plant (BoP) - Mechanical** |  | 2026-12-04 | 2027-05-02 |  |  |
| EM-6221 | Installation of Powerhouse EOT Cranes (5 units), Rails, and Embedded Parts | 60d | 2026-12-04 | 2027-02-01 | KD-25 SS |  |
| EM-6222 | Installation of Cooling Water, Drainage, and Dewatering Systems | 90d | 2027-02-02 | 2027-05-02 | EM-6221 |  |
| EM-6223 | Installation of HVAC, Compressed Air, and Firefighting Systems | 90d | 2027-02-02 | 2027-05-02 | EM-6221 |  |
| 3 | **Powerhouse Electrical & Control Systems** |  | 2027-07-02 | 2028-02-26 |  |  |
| 1 | **Main Generating Units - Electrical** |  | 2027-07-02 | 2028-02-26 |  |  |
| EM-6311 | Unit 1: Assemble Generator Stator, Rotor, and Bearings | 60d | 2027-07-02 | 2027-08-30 | EM-6212 |  |
| EM-6312 | Unit 2: Assemble Generator Stator, Rotor, and Bearings | 60d | 2027-07-02 | 2027-08-30 | EM-6214 SS |  |
| EM-6313 | Unit 3: Assemble Generator Stator, Rotor, and Bearings | 60d | 2027-08-31 | 2027-10-29 | EM-6216 SS |  |
| EM-6314 | Unit 4: Assemble Generator Stator, Rotor, and Bearings | 60d | 2027-10-30 | 2027-12-28 | EM-6218 SS |  |
| EM-6315 | Unit 5: Assemble Generator Stator, Rotor, and Bearings | 60d | 2027-12-29 | 2028-02-26 | EM-6220 SS |  |
| 2 | **Balance of Plant (BoP) - Electrical & C&I** |  | 2027-08-01 | 2027-12-28 |  |  |
| EM-6321 | Installation of Main Transformers, MV/LV Switchgear, and DC/UPS Systems | 150d | 2027-08-01 | 2027-12-28 | EM-6102 SS+150d |  |
| EM-6322 | Installation of DCS, SCADA, Protection Panels, and Control Room Equipment | 90d | 2027-09-20 | 2027-12-18 | EM-6321 SS+50d |  |
| 4 | **Powerhouse Final Assembly & Finishing** |  | 2027-07-02 | 2028-04-26 |  |  |
| EM-6401 | Cabling, Grounding, and Termination for All Systems | 120d | 2027-07-02 | 2027-10-29 | EM-6311 SS |  |
| EM-6402 | Final Mechanical & Electrical Hook-ups and Pre-commissioning Checks | 60d | 2028-02-27 | 2028-04-26 | EM-6315, EM-6401 |  |
| 1 | **Pre-Construction and Design** |  | 2025-11-01 | 2026-02-28 |  |  |
| TL-7101 | Detailed Route Survey, Tower Spotting & Soil Investigation | 30d | 2025-11-01 | 2025-11-30 | KD-26 SS |  |
| TL-7102 | Preparation & Approval of Design and Shop Drawings | 30d | 2025-12-01 | 2025-12-30 | TL-7101 |  |
| TL-7103 | Procurement & Factory Acceptance Testing of Towers, Conductors, and Hardware | 60d | 2025-12-31 | 2026-02-28 | TL-7102 |  |
| 2 | **Foundation Construction** |  | 2025-12-01 | 2026-03-15 |  |  |
| TL-7201 | Right-of-Way (ROW) Clearing and Access Road Preparation | 30d | 2025-12-01 | 2025-12-30 | TL-7101 |  |
| TL-7202 | Excavation and Preparation for Tower Foundations | 45d | 2025-12-31 | 2026-02-13 | TL-7201 |  |
| TL-7203 | Formwork, Reinforcement, and Concrete Pouring for Foundations | 45d | 2026-01-30 | 2026-03-15 | TL-7202 SS+30d |  |
| 3 | **Tower Erection** |  | 2026-03-16 | 2026-05-29 |  |  |
| TL-7301 | Tower Material Staging and Panel Assembly at Site | 30d | 2026-03-16 | 2026-04-14 | TL-7203, TL-7103 |  |
| TL-7302 | Tower Erection, Alignment, and Bolt Tightening | 45d | 2026-04-15 | 2026-05-29 | TL-7301 |  |
| 4 | **Conductor and OPGW Stringing** |  | 2026-05-30 | 2026-08-12 |  |  |
| TL-7401 | Installation of Insulator Strings and Conductor Stringing Equipment | 30d | 2026-05-30 | 2026-06-28 | TL-7302 |  |
| TL-7402 | Conductor & OPGW Stringing, Sagging, and Clamping | 45d | 2026-06-29 | 2026-08-12 | TL-7401 |  |
| 5 | **Testing and Commissioning** |  | 2026-08-13 | 2026-09-23 |  |  |
| TL-7501 | Installation of Fittings, Vibration Dampers, and Warning Spheres | 20d | 2026-08-13 | 2026-09-01 | TL-7402 |  |
| TL-7502 | Pre-Commissioning Tests (Continuity, Insulation Resistance) | 10d | 2026-09-02 | 2026-09-11 | TL-7501 |  |
| TL-7503 | Final Walk-through, Punch List Rectification, and Handover | 12d | 2026-09-12 | 2026-09-23 | TL-7502 |  |
| 1 | **Pre-Commissioning and Dry Testing** |  | 2028-05-02 | 2028-05-06 |  |  |
| TC-8101 | Dry Loop Checks & Verification (Instrumentation, Control, Protection) | 5d | 2028-05-02 | 2028-05-06 | KD-27 SS |  |
| TC-8102 | Mechanical Cold Commissioning (Alignment, Rotational Checks, Lubrication) | 5d | 2028-05-02 | 2028-05-06 | KD-27 SS |  |
| 2 | **Wet Commissioning and System Tests** |  | 2028-05-07 | 2028-05-16 |  |  |
| TC-8201 | First Filling and Pressurization of Penstock and Waterways | 5d | 2028-05-07 | 2028-05-11 | TC-8101, TC-8102 |  |
| TC-8202 | Leakage and Pressure Tests of Waterways and Valves | 5d | 2028-05-12 | 2028-05-16 | TC-8201 |  |
| 3 | **Unit Commissioning** |  | 2028-05-17 | 2028-06-13 |  |  |
| 1 | **Unit 1 Commissioning** |  | 2028-05-17 | 2028-05-24 |  |  |
| TC-8311 | Unit 1 First Spin and No-Load Run | 1d | 2028-05-17 | 2028-05-17 | TC-8202 |  |
| TC-8312 | Unit 1 Synchronization to Grid | 1d | 2028-05-18 | 2028-05-18 | TC-8311 |  |
| TC-8313 | Unit 1 Load Rejection and Performance Tests | 3d | 2028-05-19 | 2028-05-21 | TC-8312 |  |
| TC-8314 | Unit 1 Reliability Run (72 hours) | 3d | 2028-05-22 | 2028-05-24 | TC-8313 |  |
| 2 | **Unit 2 Commissioning** |  | 2028-05-22 | 2028-05-29 |  |  |
| TC-8321 | Unit 2 First Spin and No-Load Run | 1d | 2028-05-22 | 2028-05-22 | TC-8313 |  |
| TC-8322 | Unit 2 Synchronization to Grid | 1d | 2028-05-23 | 2028-05-23 | TC-8321 |  |
| TC-8323 | Unit 2 Load Rejection and Performance Tests | 3d | 2028-05-24 | 2028-05-26 | TC-8322 |  |
| TC-8324 | Unit 2 Reliability Run (72 hours) | 3d | 2028-05-27 | 2028-05-29 | TC-8323 |  |
| 3 | **Unit 3 Commissioning** |  | 2028-05-27 | 2028-06-03 |  |  |
| TC-8331 | Unit 3 First Spin and No-Load Run | 1d | 2028-05-27 | 2028-05-27 | TC-8323 |  |
| TC-8332 | Unit 3 Synchronization to Grid | 1d | 2028-05-28 | 2028-05-28 | TC-8331 |  |
| TC-8333 | Unit 3 Load Rejection and Performance Tests | 3d | 2028-05-29 | 2028-05-31 | TC-8332 |  |
| TC-8334 | Unit 3 Reliability Run (72 hours) | 3d | 2028-06-01 | 2028-06-03 | TC-8333 |  |
| 4 | **Unit 4 Commissioning** |  | 2028-06-01 | 2028-06-08 |  |  |
| TC-8341 | Unit 4 First Spin and No-Load Run | 1d | 2028-06-01 | 2028-06-01 | TC-8333 |  |
| TC-8342 | Unit 4 Synchronization to Grid | 1d | 2028-06-02 | 2028-06-02 | TC-8341 |  |
| TC-8343 | Unit 4 Load Rejection and Performance Tests | 3d | 2028-06-03 | 2028-06-05 | TC-8342 |  |
| TC-8344 | Unit 4 Reliability Run (72 hours) | 3d | 2028-06-06 | 2028-06-08 | TC-8343 |  |
| 5 | **Unit 5 Commissioning** |  | 2028-06-06 | 2028-06-13 |  |  |
| TC-8351 | Unit 5 First Spin and No-Load Run | 1d | 2028-06-06 | 2028-06-06 | TC-8343 |  |
| TC-8352 | Unit 5 Synchronization to Grid | 1d | 2028-06-07 | 2028-06-07 | TC-8351 |  |
| TC-8353 | Unit 5 Load Rejection and Performance Tests | 3d | 2028-06-08 | 2028-06-10 | TC-8352 |  |
| TC-8354 | Unit 5 Reliability Run (72 hours) | 3d | 2028-06-11 | 2028-06-13 | TC-8353 |  |
| 4 | **Integrated Plant Performance & Reliability Test** |  | 2028-05-17 | 2028-06-20 |  |  |
| TC-8402 | Environmental Monitoring (Noise, Vibration, Water Quality) during Operation | 15d | 2028-05-17 | 2028-05-31 | TC-8311 SS |  |
| TC-8401 | Integrated Plant Reliability Test (All Units at Full Load) | 7d | 2028-06-14 | 2028-06-20 | TC-8354 |  |
| 5 | **Final Documentation and Handover** |  | 2028-05-02 | 2028-06-30 |  |  |
| TC-8501 | Compilation of Test Records and Commissioning Dossier | 60d | 2028-05-02 | 2028-06-30 | TC-8101 SS |  |
| TC-8502 | Final Performance Acceptance Test (PAT) and Punch List Rectification | 10d | 2028-06-21 | 2028-06-30 | TC-8401 |  |

Removed: Development of Construction Programme; Geotechnical Investigation Studies; KD-31 Geotechnical Investigation in Headworks; Construction Headworks (LOT 2-I); Cofferdam & River Diversion Works; Flood Walls; A-1210 Connecting Tunnel Excavation & Support; A-1220 VPS Site Prep & Raise Boring; A-1230 VPS Steel Lining & Installation; A-1250 HPS Concrete Lining & Finishing; A-1340 Access Tunnel Lining & Finishing; A-1360 Drainage Galley Concrete Works; A-1380 Escape Tunnel Concrete & Finishes; A-1390 Tunnel Boring Machine (TBM) Mobilization; A-1400 Main Access Tunnel Boring; A-1410 Tunnel Finishing & Demobilization; A-1420 TRC Excavation & Earthworks; A-1430 TRC Concrete Lining & Structural Works; Gates; A-1440 Procure & Fabricate Gates; A-1450 Install Gates & Hoisting Equipment; Penstock Pipe; A-1460 Procure & Deliver Penstock Pipe; KD-24 Commencement of Construction of Penstock Pipe; A-1470 Install & Weld Penstock Pipe; Electromechanical Works; A-1480 Procure Turbines & Generators; A-1490 Install Main Electromechanical Equipment; Transmission Line Works; A-1500 Survey Route & Clear Right-of-Way; A-1510 Construct Tower Foundations; A-1520 Erect Towers & String Conductors; System Testing & Commissioning; A-1530 Pre-commissioning Checks; A-1540 Wet & Dry Commissioning

Changed:

| ID | Task | Start | Finish | Duration | Total float | Predecessors | Other |
| --- | --- | --- | --- | --- | --- | --- | --- |
| 2 | **Equipment** | 2025-01-01 → 2025-11-01 (+304d) | 2027-09-27 → 2028-07-27 (+304d) |  |  |  |  |
| MB-2000 | Manitou Lifting Equipment | 2025-01-01 → 2025-11-01 (+304d) | 2027-09-27 → 2028-07-27 (+304d) |  | 279d → -25d |  | constraint none → start on or after 2025-11-01 |
| MB-2001 | Normal Shotcrete Machine | 2025-01-01 → 2025-11-01 (+304d) | 2027-09-27 → 2028-07-27 (+304d) |  | 279d → -25d | none → MB-2000 SS |  |
| MB-2002 | Tower Crane no 1 | 2025-01-01 → 2025-11-01 (+304d) | 2027-09-27 → 2028-07-27 (+304d) |  | 279d → -25d | none → MB-2000 SS |  |
| MB-2003 | Tower Crane no 2 | 2025-01-01 → 2025-11-01 (+304d) | 2027-09-27 → 2028-07-27 (+304d) |  | 279d → -25d | none → MB-2000 SS |  |
| MB-2004 | Tower Crane no 3 | 2025-01-01 → 2025-11-01 (+304d) | 2027-09-27 → 2028-07-27 (+304d) |  | 279d → -25d | none → MB-2000 SS |  |
| MB-2005 | Tower Crane no 4 | 2025-01-01 → 2025-11-01 (+304d) | 2027-09-27 → 2028-07-27 (+304d) |  | 279d → -25d | none → MB-2000 SS |  |
| MB-2006 | Grouting Pump Machine | 2025-01-01 → 2025-11-01 (+304d) | 2027-09-27 → 2028-07-27 (+304d) |  | 279d → -25d | none → MB-2000 SS |  |
| MB-2007 | ROC drilling Machine | 2025-01-01 → 2025-11-01 (+304d) | 2027-09-27 → 2028-07-27 (+304d) |  | 279d → -25d | none → MB-2000 SS |  |
| MB-2008 | Shotcrete Machine | 2025-01-01 → 2025-11-01 (+304d) | 2027-09-27 → 2028-07-27 (+304d) |  | 279d → -25d | none → MB-2000 SS |  |
| MB-2009 | Vertical Shaft Boring Machine | 2025-01-01 → 2025-11-01 (+304d) | 2027-09-27 → 2028-07-27 (+304d) |  | 279d → -25d | none → MB-2000 SS |  |
| KD-01 | Commencement of PMC |  |  |  |  |  | was named Commencement of Development of Construction Programme |
| 1 | **Work Schedules** |  | 2025-07-10 → 2025-07-15 (+5d) |  |  |  |  |
| CP-1000 | Development of Work Breakdown Structure |  | 2025-06-10 → 2025-06-15 (+5d) | 10d → 15d | 1088d → 1083d |  |  |
| CP-1010 | Preparation of Detailed Work Schedule | 2025-06-11 → 2025-06-16 (+5d) | 2025-07-10 → 2025-07-15 (+5d) |  | 1088d → 1083d |  |  |
| IFC-DRW | **IFC Drawings** | none → 2025-01-01 | none → 2026-02-13 |  |  |  |  |
| IFC-LOT2I | **IFC Drawings - Headworks (LOT 2-I)** | none → 2025-06-01 | none → 2025-10-23 |  |  |  |  |
| IFC-2101 | Issuance of IFC for Cofferdam & River Diversion Works | none → 2025-06-01 | none → 2025-06-20 | 0d → 20d | none → 937d |  | constraint none → start on or after 2025-06-01 |
| IFC-2104 | Issuance of IFC for Intake & Gravel Trap (Excavation & Foundation) | none → 2025-06-11 | none → 2025-06-25 | 0d → 15d | none → 983d | IFC-2102 → IFC-2101 SS+10d |  |
| IFC-2110 | Issuance of IFC for Headpond & CFRD (Excavation & Embankment) | none → 2025-06-21 | none → 2025-07-10 | 0d → 20d | none → 993d | IFC-2109 → IFC-2101 |  |
| IFC-2105 | Issuance of IFC for Intake & Gravel Trap (Structural Concrete) | none → 2025-06-26 | none → 2025-07-25 | 0d → 30d | none → 983d | IFC-2104 FS+90d → IFC-2104 |  |
| IFC-2102 | Issuance of IFC for Barrage & Undersluice (Foundation & Micro-piling) | none → 2025-07-21 | none → 2025-08-19 | 0d → 30d | none → 937d |  |  |
| IFC-2107 | Issuance of IFC for Approach Culvert & Settling Basin (Excavation & Foundation) | none → 2025-07-26 | none → 2025-08-09 | 0d → 15d | none → 983d |  |  |
| IFC-2111 | Issuance of IFC for Headpond Lining & Bypass Pipe | none → 2025-08-10 | none → 2025-09-08 | 0d → 30d | none → 993d | IFC-2110 FS+150d → IFC-2110 FS+30d |  |
| IFC-2103 | Issuance of IFC for Barrage & Undersluice (Structural Concrete) | none → 2025-08-20 | none → 2025-10-03 | 0d → 45d | none → 937d | IFC-2102 FS+120d → IFC-2102 SS+30d |  |
| IFC-2106 | Issuance of IFC for Left Bank Flood Walls (All Sections) | none → 2025-08-20 | none → 2025-09-18 | 0d → 30d | none → 1018d |  |  |
| IFC-2108 | Issuance of IFC for Approach Culvert & Settling Basin (Structural Concrete) | none → 2025-08-20 | none → 2025-09-08 | 0d → 20d | none → 983d | IFC-2107 FS+150d → IFC-2107 FS+10d |  |
| IFC-2109 | Issuance of IFC for Energy Dissipator | none → 2025-09-09 | none → 2025-10-23 | 0d → 45d | none → 983d | IFC-2108 FS+60d → IFC-2108 |  |
| IFC-LOT2III | **IFC Drawings - Penstock & Surge (LOT 2-III)** | none → 2025-04-30 | none → 2025-11-13 |  |  |  |  |
| IFC-2221 | Issuance of IFC for Horizontal Penstock Shaft (Excavation & Support) | none → 2025-04-30 | none → 2025-05-29 | 0d → 30d | none → 1086d | IFC-3501 FS+210d → IFC-3501 |  |
| IFC-2222 | Issuance of IFC for Horizontal Penstock Shaft (Steel Liner & Concrete) | none → 2025-05-30 | none → 2025-06-13 | 0d → 15d | none → 1086d | IFC-2221 FS+45d → IFC-2221 |  |
| IFC-2201 | Issuance of IFC for Surge Shaft (Excavation & Support) | none → 2025-08-01 | none → 2025-08-30 | 0d → 30d | none → 920d |  | constraint none → start on or after 2025-08-01 |
| IFC-2202 | Issuance of IFC for Surge Shaft (Concrete Lining) | none → 2025-08-31 | none → 2025-09-29 | 0d → 30d | none → 972d | IFC-2201 FS+240d → IFC-2201 |  |
| IFC-2211 | Issuance of IFC for Vertical Pressure Shaft (Excavation & Support) | none → 2025-08-31 | none → 2025-10-14 | 0d → 45d | none → 920d |  |  |
| IFC-2212 | Issuance of IFC for Vertical Pressure Shaft (Steel Liner & Concrete) | none → 2025-10-15 | none → 2025-11-13 | 0d → 30d | none → 920d | IFC-2211 FS+300d → IFC-2211 |  |
| IFC-LOT2IV | **IFC Drawings - Powerhouse & Auxiliary (LOT 2-IV)** | none → 2025-03-31 | none → 2025-10-16 |  |  |  |  |
| IFC-3101 | Issuance of IFC for Ventilation Tunnel (Excavation & Support) | none → 2025-03-31 | none → 2025-04-29 | 0d → 30d | none → 961d | IFC-4211 FS+60d → IFC-4211 |  |
| IFC-3501 | Issuance of IFC for Access Tunnel to Penstock (Excavation & Support) | none → 2025-03-31 | none → 2025-04-29 | 0d → 30d | none → 1086d | IFC-4211 FS+90d → IFC-4211 |  |
| IFC-3201 | Issuance of IFC for Powerhouse Cavern (Excavation & Primary Support) | none → 2025-04-30 | none → 2025-05-29 | 0d → 30d | none → 961d | IFC-3101 FS+30d → IFC-3101 |  |
| IFC-3301 | Issuance of IFC for Transformer Cavern (Excavation & Primary Support) | none → 2025-04-30 | none → 2025-06-08 | 0d → 40d | none → 961d | IFC-3201 SS+30d → IFC-3201 SS |  |
| IFC-3202 | Issuance of IFC for Powerhouse Cavern (Crane Beam & Arch Concrete) | none → 2025-05-30 | none → 2025-07-08 | 0d → 40d | none → 1018d | IFC-3201 FS+120d → IFC-3201 |  |
| IFC-3302 | Issuance of IFC for Transformer Cavern (Structural Concrete) | none → 2025-06-09 | none → 2025-07-23 | 0d → 45d | none → 961d | IFC-3301 FS+150d → IFC-3301 |  |
| IFC-3203 | Issuance of IFC for Powerhouse Cavern (Substructure & Draft Tube Concrete) | none → 2025-07-09 | none → 2025-08-07 | 0d → 30d | none → 1018d | IFC-3202 FS+90d → IFC-3202 |  |
| IFC-3401 | Issuance of IFC for Cable Tunnel (Excavation & Lining) | none → 2025-07-24 | none → 2025-08-22 | 0d → 30d | none → 961d |  |  |
| IFC-3601 | Issuance of IFC for Drainage Gallery (Excavation & Lining) | none → 2025-08-23 | none → 2025-09-16 | 0d → 25d | none → 961d | IFC-3401 FS+30d → IFC-3401 |  |
| IFC-3701 | Issuance of IFC for Escape Tunnel (Excavation & Lining) | none → 2025-09-17 | none → 2025-10-16 | 0d → 30d | none → 961d | IFC-3601 FS+90d → IFC-3601 |  |
| IFC-LOT2V | **IFC Drawings - Access & Tailrace Tunnels (LOT 2-V)** | none → 2025-03-01 | none → 2026-02-13 |  |  |  |  |
| IFC-4201 | Issuance of IFC for Tailrace Tunnel (Portal & Excavation Support) | none → 2025-03-01 | none → 2025-03-30 | 0d → 30d | none → 835d |  | constraint none → start on or after 2025-03-01 |
| IFC-4211 | Issuance of IFC for Main Access Tunnel (Portal & Excavation Support) | none → 2025-03-01 | none → 2025-03-30 | 0d → 30d | none → 835d | none → IFC-4201 SS |  |
| IFC-4202 | Issuance of IFC for Tailrace Tunnel (Concrete Lining & Outlet Works) | none → 2025-03-31 | none → 2025-04-19 | 0d → 20d | none → 1135d | IFC-4201 FS+240d → IFC-4201 |  |
| IFC-4212 | Issuance of IFC for Main Access Tunnel (Final Lining & Pavement) | none → 2026-01-25 | none → 2026-02-13 | 0d → 20d | none → 835d |  |  |
| IFC-LOT3 | **IFC Drawings - Hydromechanical Works** | none → 2025-01-01 | none → 2025-11-26 |  |  |  |  |
| IFC-5101 | Approval of HM Design for Intake & Undersluice Gates | none → 2025-01-01 | none → 2025-03-01 | 0d → 60d | none → 907d |  |  |
| IFC-5102 | Approval of HM Design for Settling Basin & Headpond Gates | none → 2025-05-31 | none → 2025-07-29 | 0d → 60d | none → 907d |  |  |
| IFC-5201 | Approval of HM Design for Penstock Pipes & Manifolds | none → 2025-09-28 | none → 2025-11-26 | 0d → 60d | none → 907d |  |  |
| IFC-LOT4 | **IFC Drawings - Electromechanical Works** | none → 2025-01-01 | none → 2025-09-27 |  |  |  |  |
| IFC-6002 | Approval of EM Design for Powerhouse Cranes | none → 2025-01-01 | none → 2025-02-14 | 0d → 45d | none → 967d |  |  |
| IFC-6001 | Approval of EM Design for Turbine & Generator | none → 2025-03-17 | none → 2025-04-30 | 0d → 45d | none → 967d |  |  |
| IFC-6003 | Approval of EM Design for Transformers & Switchgear | none → 2025-05-31 | none → 2025-07-29 | 0d → 60d | none → 967d |  |  |
| IFC-6004 | Approval of EM Design for Balance of Plant (BOP) | none → 2025-08-29 | none → 2025-09-27 | 0d → 30d | none → 967d |  |  |
| IFC-LOT5 | **IFC Drawings - Transmission Line (LOT 5)** | none → 2025-01-01 | none → 2025-08-28 |  |  |  |  |
| IFC-2501 | Issuance of IFC for Transmission Line (Foundations & Access) | none → 2025-01-01 | none → 2025-03-01 | 0d → 60d | none → 1010d |  |  |
| IFC-2502 | Issuance of IFC for Transmission Line (Tower & Stringing Details) | none → 2025-05-31 | none → 2025-08-28 | 0d → 90d | none → 1010d |  |  |
| A-2010 | Surge Shaft Excavation | 2025-11-01 → 2025-12-01 (+30d) | 2026-06-03 → 2026-11-15 (+165d) | 215d → 350d |  | KD-11 SS → A-2000 |  |
| A-1240 | Horizontal Shaft Tunnel Excavation |  | 2026-03-07 → 2026-02-23 (-12d) | 42d → 30d |  |  | was named HPS Excavation & Support |
| A-1260 | Ventillation Tunnel Excavation (N1 to V1) |  | 2025-10-06 → 2025-09-26 (-10d) | 55d → 45d |  |  | was named Ventilation Tunnel Excavation |
| A-1270 | Ventillation Tunnel Excavation (V1 to V2) | 2025-10-07 → 2025-09-27 (-10d) | 2025-11-30 → 2025-11-10 (-20d) | 55d → 45d |  |  | was named Ventilation Tunnel Lining & Systems |
| A-1330 | Penstock Access Tunnel Excavation |  | 2026-03-23 → 2026-09-29 (+190d) | 193d → 383d |  |  | was named Access Tunnel Excavation |
| A-1350 | Drainage Galley Excavation and Lining |  | 2027-03-13 → 2027-07-21 (+130d) | 130d → 260d |  |  | was named Drainage Galley Excavation |
| A-1370 | Escape Tunnel Excavation & Lining |  | 2027-05-27 → 2027-07-31 (+65d) | 65d → 130d |  |  | was named Escape Tunnel Excavation & Support |

| ID | Task | Start | Finish | Total float | Other |
| --- | --- | --- | --- | --- | --- |
| 4 | **Construction of Tunnels (LOT 2-V)** |  | 2027-10-24 → 2027-10-21 (-3d) |  |  |
| 4.1 | **Main Access Tunnel** |  | 2027-10-24 → 2027-10-21 (-3d) |  |  |
| 4 | **Construction of Electromechanical Works (LOT-4)** |  | 2028-05-01 → 2028-04-26 (-5d) |  |  |
| 5 | **Transmission Line Works (LOT-5)** | 2027-01-01 → 2025-11-01 (-426d) | 2027-11-08 → 2026-09-23 (-411d) |  |  |
| KD-26 | Commencement of Transmission Line Works | 2027-01-01 → 2025-11-01 (-426d) | 2027-01-01 → 2025-11-01 (-426d) | 237d → 648d | constraint start on or after 2027-01-01 → start on or after 2025-11-01 |
| 6 | **Testing & Commissioning** |  | 2028-07-01 → 2028-06-30 (-1d) |  |  |
| KD-27 | Commencement of Testing and Commissioning |  |  | 1d → 2d | was named Commencement of Construction of Penstock Pipe |

## Version 4 (data date 2025-01-01, saved 2025-06-23)

Note of the change: Database backup

Last finish stays 2028-09-15.

Added:

| ID | Task | Duration | Start | Finish | Predecessors |
| --- | --- | --- | --- | --- | --- |
| A-2030 | Surge Shaft Collar Construction | 7d | 2025-12-08 | 2025-12-14 | A-2020 |
| A-2040 | Installation of Shaft Excavation Facilities | 7d | 2025-12-08 | 2025-12-14 | A-2030 SS |
| A-2050 | Drilling and Blasting Vertical Excavation (Total Runs = 59) | 236d | 2025-12-15 | 2026-08-07 | A-2030 |
| 1 | **Drilling and Blasting Vertical Excavation Single Run (Run Length = 2.5m)** |  | 2025-12-14 | 2025-12-17 |  |
| A-2640 | Survey and Drill Marking | 0.04d | 2025-12-14 | 2025-12-14 | A-2040 |
| A-2650 | Drilling of Holes | 0.42d | 2025-12-14 | 2025-12-15 | A-2640 |
| A-2660 | Charge and Tie-in (Load Explosives) | 0.17d | 2025-12-15 | 2025-12-15 | A-2650 |
| A-2670 | Shaft Clearance and Blasting | 0.04d | 2025-12-15 | 2025-12-15 | A-2660 |
| A-2680 | Post-Blast Ventilation (Re-entry Period) | 0.04d | 2025-12-15 | 2025-12-15 | A-2670 |
| A-2690 | Mucking (Spoil Removal) | 1d | 2025-12-15 | 2025-12-16 | A-2680 |
| A-2700 | Scaling | 0.12d | 2025-12-16 | 2025-12-16 | A-2690 |
| A-2710 | Rock Bolt and Shotcrete | 1d | 2025-12-16 | 2025-12-17 | A-2700 |
| 2 | **Concrete Lining of Surge Shaft** |  | 2026-08-08 | 2027-01-18 |  |
| A-2800 | Bottom Slab Concreting [EL. 1268.525 to EL. 1270.00] | 14d | 2026-08-08 | 2026-08-21 | A-2050 |
| A-2810 | Concrete Lining 1.4 m thick [EL. 1270.00 to EL. 1303.75] | 35d | 2026-08-22 | 2026-09-25 | A-2800 |
| A-2820 | Concrete Lining 1.1 m thick [EL.1303.75 to EL. 1337.50] | 35d | 2026-09-26 | 2026-10-30 | A-2810 |
| A-2830 | Concrete Lining 0.7 m thick [EL. 1337.50 to EL.1371.25] | 35d | 2026-10-31 | 2026-12-04 | A-2820 |
| A-2840 | Concrete Lining 0.4 m thick [EL. 1371.25 to EL. 1416] | 45d | 2026-12-05 | 2027-01-18 | A-2830 |
| 1 | **Concrete Lining Single Lift 5m** |  | 2026-08-22 | 2026-08-26 |  |
| A-2920 | Rebar Cage Placement and Formwork Placement | 1d | 2026-08-22 | 2026-08-22 | A-2800 |
| A-2930 | Concrete Puring | 1d | 2026-08-23 | 2026-08-23 | A-2920 |
| A-2940 | Formwork Holding Period | 2d | 2026-08-24 | 2026-08-25 | A-2930 |
| A-2950 | Formwork Removal | 1d | 2026-08-26 | 2026-08-26 | A-2940 |
| 3 | **Construction of Roof Truss** |  | 2026-10-31 | 2027-02-05 |  |
| A-3000 | Material Arrangement for Roof Truss | 30d | 2026-10-31 | 2026-11-29 | A-2830 SS |
| A-3010 | Construction of Roof Truss | 18d | 2027-01-19 | 2027-02-05 | A-2840 |

Changed:

| ID | Task | Start | Finish | Duration | Total float | Other |
| --- | --- | --- | --- | --- | --- | --- |
| 1 | **Surge Shaft & Connecting Tunnel** |  | 2027-01-04 → 2027-02-05 (+32d) |  |  |  |
| A-2000 | Site Clearance |  | 2025-11-30 → 2025-11-07 (-23d) | 30d → 7d | 545d → 513d | was named Site Clearance and Excavation Arrangements |
| A-2010 | Slope Protection and Platform (upto EL. 1424) | 2025-12-01 → 2025-11-08 (-23d) | 2026-11-15 → 2025-11-19 (-361d) | 350d → 12d | 545d → 513d | was named Surge Shaft Excavation |
| A-2020 | Slope Protection and Platform (upto EL. 1416) | 2026-11-16 → 2025-11-20 (-361d) | 2027-01-04 → 2025-12-07 (-393d) | 50d → 18d | 545d → 513d | was named Construction of Connecting Tunnel |
| A-1280 | PHC Excavation & Primary Support (Top Heading & Benching) |  |  |  |  | was named PHC Cavern Excavation & Benching |
| A-1290 | PHC Structural Concrete Works (Foundations, Walls, Crane Beams) |  |  |  |  | was named PHC Cavern Concrete & Structural Works |
| A-1300 | TC Excavation & Primary Support (Top Heading & Benching) |  |  |  |  | was named TC Cavern Excavation & Support |
| A-1310 | TC Structural Concrete Works (Foundations & Slabs) |  |  |  |  | was named TC Cavern Concrete & Finishing |
